# Veteran Connect Post-2026 PI Claim Starter Pack MVP

How a schedule from ProjectLibre changed from version to version. A marks actual dates.

## Version 1 (saved 2026-05-11)

Note of the change: Set up Virtual Advocate PI cloud backend foundation

| ID | WBS | Task | Duration | Start | Finish | Predecessors | Complete |
| --- | --- | --- | --- | --- | --- | --- | --- |
| 1 | 1 | **Phase 1: Product scope and compliance foundation** | 18d? | 2026-05-11 | 2026-06-03 |  | 7% |
| 2 |  | Confirm MVP product definition | 1d? | 2026-05-11 | 2026-05-11 |  | 100% |
| 3 |  | Confirm version 1 exclusions | 1d? | 2026-05-11 | 2026-05-11 |  | 25% |
| 4 |  | Define supported post-2026 claim scenarios | 1d? | 2026-05-12 | 2026-05-12 | 3 |  |
| 5 |  | Draft disclaimer and AI-use wording | 1d? | 2026-05-13 | 2026-05-13 | 4 |  |
| 6 |  | Define first user journey | 1d? | 2026-05-14 | 2026-05-14 | 5 |  |
| 7 |  | Define MVP feature list | 1d? | 2026-05-15 | 2026-05-15 | 6 |  |
| 8 |  | Define first data objects | 1d? | 2026-05-18 | 2026-05-18 | 7 |  |
| 9 |  | Define Phase 1 acceptance criteria | 1d? | 2026-05-19 | 2026-05-19 | 8 |  |
| 10 |  | Review Phase 1 pack before build starts | 1d? | 2026-05-20 | 2026-05-20 | 9 |  |
| 11 |  | Confirm MVP boundaries and non-goals | 2d? | 2026-05-21 | 2026-05-22 | 10 |  |
| 12 |  | Map VETS Act / improved MRCA product assumptions | 2d? | 2026-05-25 | 2026-05-26 | 11 |  |
| 13 |  | Define claim scenarios and safety language | 2d? | 2026-05-27 | 2026-05-28 | 12 |  |
| 14 |  | Draft privacy, consent, AI-use and no-advice wording | 2d? | 2026-05-29 | 2026-06-01 | 13 |  |
| 15 |  | Write first user journey and acceptance criteria | 2d? | 2026-06-02 | 2026-06-03 | 14 |  |
| 16 |  | Milestone: Phase 1 complete | 0d? | 2026-06-03 | 2026-06-03 | 15 |  |
| 17 | 2 | **Phase 2: Google Cloud foundation** | 10d? | 2026-06-04 | 2026-06-17 |  |  |
| 18 |  | Create Google Cloud dev/test/prod project structure | 2d? | 2026-06-04 | 2026-06-05 | 16 |  |
| 19 |  | Enable core Google Cloud services | 1d? | 2026-06-08 | 2026-06-08 | 18 |  |
| 20 |  | Configure IAM, service accounts and Secret Manager | 2d? | 2026-06-09 | 2026-06-10 | 19 |  |
| 21 |  | Configure Firebase Authentication and App Check | 2d? | 2026-06-11 | 2026-06-12 | 20 |  |
| 22 |  | Create Cloud Run API skeleton and CI/CD | 2d? | 2026-06-15 | 2026-06-16 | 21 |  |
| 23 |  | Provision Cloud SQL PostgreSQL and Cloud Storage buckets | 1d? | 2026-06-17 | 2026-06-17 | 22 |  |
| 24 |  | Milestone: Phase 2 complete | 0d? | 2026-06-17 | 2026-06-17 | 23 |  |
| 25 | 3 | **Phase 3: Core backend and database** | 20d? | 2026-06-18 | 2026-07-15 |  |  |
| 26 |  | Create database schema and migrations | 3d? | 2026-06-18 | 2026-06-22 | 24 |  |
| 27 |  | Implement Firebase token verification and user service | 3d? | 2026-06-23 | 2026-06-25 | 26 |  |
| 28 |  | Build claim workspace API | 4d? | 2026-06-26 | 2026-07-01 | 27 |  |
| 29 |  | Build condition and accepted-condition history APIs | 4d? | 2026-07-02 | 2026-07-07 | 28 |  |
| 30 |  | Build evidence metadata and audit APIs | 3d? | 2026-07-08 | 2026-07-10 | 29 |  |
| 31 |  | Add backend tests and API documentation | 3d? | 2026-07-13 | 2026-07-15 | 30 |  |
| 32 |  | Milestone: Phase 3 complete | 0d? | 2026-07-15 | 2026-07-15 | 31 |  |
| 33 | 4 | **Phase 4: Web MVP shell** | 15d? | 2026-07-16 | 2026-08-05 |  |  |
| 34 |  | Create Next.js app scaffolding and routing | 2d? | 2026-07-16 | 2026-07-17 | 32 |  |
| 35 |  | Build login and session UI | 3d? | 2026-07-20 | 2026-07-22 | 34 |  |
| 36 |  | Build dashboard and claim workspace list | 3d? | 2026-07-23 | 2026-07-27 | 35 |  |
| 37 |  | Build new claim and pathway selector | 3d? | 2026-07-28 | 2026-07-30 | 36 |  |
| 38 |  | Build condition intake UI | 3d? | 2026-07-31 | 2026-08-04 | 37 |  |
| 39 |  | Build evidence checklist shell | 1d? | 2026-08-05 | 2026-08-05 | 38 |  |
| 40 |  | Milestone: Phase 4 complete | 0d? | 2026-08-05 | 2026-08-05 | 39 |  |
| 41 | 5 | **Phase 5: GARP M-aware question engine** | 20d? | 2026-08-06 | 2026-09-02 |  |  |
| 42 |  | Create question template model and renderer | 3d? | 2026-08-06 | 2026-08-10 | 40 |  |
| 43 |  | Build diagnosis, symptoms and treatment groups | 4d? | 2026-08-11 | 2026-08-14 | 42 |  |
| 44 |  | Build stability, functional, lifestyle and work impact groups | 5d? | 2026-08-17 | 2026-08-21 | 43 |  |
| 45 |  | Build worsening and previous compensation groups | 4d? | 2026-08-24 | 2026-08-27 | 44 |  |
| 46 |  | Add save/resume validation and structured summary | 4d? | 2026-08-28 | 2026-09-02 | 45 |  |
| 47 |  | Milestone: Phase 5 complete | 0d? | 2026-09-02 | 2026-09-02 | 46 |  |
| 48 | 6 | **Phase 6: Evidence upload and gap tracker** | 15d? | 2026-09-03 | 2026-09-23 |  |  |
| 49 |  | Build signed upload and download URL flow | 3d? | 2026-09-03 | 2026-09-07 | 47 |  |
| 50 |  | Build evidence item tagging and condition linking | 3d? | 2026-09-08 | 2026-09-10 | 49 |  |
| 51 |  | Build evidence status workflow | 3d? | 2026-09-11 | 2026-09-15 | 50 |  |
| 52 |  | Build evidence gap rules engine | 4d? | 2026-09-16 | 2026-09-21 | 51 |  |
| 53 |  | Build gap dashboard and reminder prompts | 2d? | 2026-09-22 | 2026-09-23 | 52 |  |
| 54 |  | Milestone: Phase 6 complete | 0d? | 2026-09-23 | 2026-09-23 | 53 |  |
| 55 | 7 | **Phase 7: AI/RAG knowledge base** | 25d? | 2026-09-03 | 2026-10-07 |  |  |
| 56 |  | Create approved source registry and knowledge base structure | 4d? | 2026-09-03 | 2026-09-08 | 47 |  |
| 57 |  | Load GARP M, DVA reform references and internal templates | 4d? | 2026-09-09 | 2026-09-14 | 56 |  |
| 58 |  | Build RAG retrieval API | 5d? | 2026-09-15 | 2026-09-21 | 57 |  |
| 59 |  | Build prompt templates and safety guardrails | 4d? | 2026-09-22 | 2026-09-25 | 58 |  |
| 60 |  | Generate veteran statement and worsening summary drafts | 4d? | 2026-09-28 | 2026-10-01 | 59 |  |
| 61 |  | Generate doctor questions, evidence gap summary and doctor letter | 4d? | 2026-10-02 | 2026-10-07 | 60 |  |
| 62 |  | Milestone: Phase 7 complete | 0d? | 2026-10-07 | 2026-10-07 | 61 |  |
| 63 | 8 | **Phase 8: Claim Starter Pack document generation** | 15d? | 2026-10-08 | 2026-10-28 |  |  |
| 64 |  | Design DOCX starter pack templates | 4d? | 2026-10-08 | 2026-10-13 | 54, 62 |  |
| 65 |  | Build document generation service | 4d? | 2026-10-14 | 2026-10-19 | 64 |  |
| 66 |  | Add PDF conversion and storage versioning | 3d? | 2026-10-20 | 2026-10-22 | 65 |  |
| 67 |  | Add document download signed URL flow | 2d? | 2026-10-23 | 2026-10-26 | 66 |  |
| 68 |  | Enforce reviewed-only content and test exports | 2d? | 2026-10-27 | 2026-10-28 | 67 |  |
| 69 |  | Milestone: Phase 8 complete | 0d? | 2026-10-28 | 2026-10-28 | 68 |  |
| 70 | 9 | **Phase 9: Doctor guidance pack** | 10d? | 2026-10-29 | 2026-11-11 |  |  |

| ID | WBS | Task | Duration | Start | Finish | Predecessors |
| --- | --- | --- | --- | --- | --- | --- |
| 71 |  | Design doctor guidance pack template | 3d? | 2026-10-29 | 2026-11-02 | 69 |
| 72 |  | Build clinical question generation workflow | 3d? | 2026-11-03 | 2026-11-05 | 71 |
| 73 |  | Add doctor-specific disclaimer and review checklist | 2d? | 2026-11-06 | 2026-11-09 | 72 |
| 74 |  | Export and test doctor guidance pack | 2d? | 2026-11-10 | 2026-11-11 | 73 |
| 75 |  | Milestone: Phase 9 complete | 0d? | 2026-11-11 | 2026-11-11 | 74 |
| 76 | 10 | **Phase 10: Admin knowledge and template manager** | 20d? | 2026-10-08 | 2026-11-04 |  |
| 77 |  | Build admin roles and access control | 3d? | 2026-10-08 | 2026-10-12 | 62 |
| 78 |  | Build source metadata manager | 4d? | 2026-10-13 | 2026-10-16 | 77 |
| 79 |  | Build question and document template editor | 5d? | 2026-10-19 | 2026-10-23 | 78 |
| 80 |  | Build prompt and disclaimer versioning | 4d? | 2026-10-26 | 2026-10-29 | 79 |
| 81 |  | Build knowledge base audit review view | 4d? | 2026-10-30 | 2026-11-04 | 80 |
| 82 |  | Milestone: Phase 10 complete | 0d? | 2026-11-04 | 2026-11-04 | 81 |
| 83 | 11 | **Phase 11: Android and iOS app MVP** | 40d? | 2026-10-29 | 2026-12-23 |  |
| 84 |  | Create MAUI app shell and shared services | 5d? | 2026-10-29 | 2026-11-04 | 69 |
| 85 |  | Integrate Firebase Authentication | 5d? | 2026-11-05 | 2026-11-11 | 84 |
| 86 |  | Build dashboard and claim workspace screens | 6d? | 2026-11-12 | 2026-11-19 | 85 |
| 87 |  | Build condition intake and question engine screens | 8d? | 2026-11-20 | 2026-12-01 | 86 |
| 88 |  | Build evidence checklist and upload flow | 7d? | 2026-12-02 | 2026-12-10 | 87 |
| 89 |  | Build AI draft review and document download screens | 6d? | 2026-12-11 | 2026-12-18 | 88 |
| 90 |  | Complete Android and iOS device testing | 3d? | 2026-12-21 | 2026-12-23 | 89 |
| 91 |  | Milestone: Phase 11 complete | 0d? | 2026-12-23 | 2026-12-23 | 90 |
| 92 | 12 | **Phase 12: Security, privacy and production hardening** | 30d? | 2026-10-29 | 2026-12-09 |  |
| 93 |  | Review RBAC enforcement and audit logging | 5d? | 2026-10-29 | 2026-11-04 | 69 |
| 94 |  | Build data export and deletion workflows | 5d? | 2026-11-05 | 2026-11-11 | 93 |
| 95 |  | Create backup and disaster recovery process | 4d? | 2026-11-12 | 2026-11-17 | 94 |
| 96 |  | Add rate limiting, monitoring and error alerts | 4d? | 2026-11-18 | 2026-11-23 | 95 |
| 97 |  | Add consent tracking and AI disclosure tracking | 4d? | 2026-11-24 | 2026-11-27 | 96 |
| 98 |  | Draft privacy policy, terms and support process | 4d? | 2026-11-30 | 2026-12-03 | 97 |
| 99 |  | Prepare penetration test and remediation buffer | 4d? | 2026-12-04 | 2026-12-09 | 98 |
| 100 |  | Milestone: Phase 12 complete | 0d? | 2026-12-09 | 2026-12-09 | 99 |
| 101 | 13 | **Phase 13: Private pilot** | 30d? | 2026-12-24 | 2027-02-03 |  |
| 102 |  | Recruit and onboard private pilot users | 5d? | 2026-12-24 | 2026-12-30 | 82, 91, 100 |
| 103 |  | Run support and feedback capture process | 5d? | 2026-12-31 | 2027-01-06 | 102 |
| 104 |  | Test veteran claim-preparation workflow | 5d? | 2027-01-07 | 2027-01-13 | 103 |
| 105 |  | Review doctor and advocate pack usefulness | 5d? | 2027-01-14 | 2027-01-20 | 104 |
| 106 |  | Fix priority issues from pilot | 6d? | 2027-01-21 | 2027-01-28 | 105 |
| 107 |  | Prepare pilot outcome report and go/no-go decision | 4d? | 2027-01-29 | 2027-02-03 | 106 |
| 108 |  | Milestone: Phase 13 complete | 0d? | 2027-02-03 | 2027-02-03 | 107 |
| 109 | 14 | **Phase 14: Commercial launch preparation** | 30d? | 2027-02-04 | 2027-03-17 |  |
| 110 |  | Decide and implement billing/subscription model | 5d? | 2027-02-04 | 2027-02-10 | 108 |
| 111 |  | Build organisation account model | 5d? | 2027-02-11 | 2027-02-17 | 110 |
| 112 |  | Set up support inbox and help centre | 5d? | 2027-02-18 | 2027-02-24 | 111 |
| 113 |  | Create marketing site and onboarding content | 5d? | 2027-02-25 | 2027-03-03 | 112 |
| 114 |  | Prepare App Store and Play Store materials | 5d? | 2027-03-04 | 2027-03-10 | 113 |
| 115 |  | Complete launch readiness and production operations | 5d? | 2027-03-11 | 2027-03-17 | 114 |
| 116 |  | Milestone: Phase 14 complete | 0d? | 2027-03-17 | 2027-03-17 | 115 |

## Version 2 (saved 2026-05-12)

Note of the change: Add evidence gap tracker API

Last finish 2027-03-17 → 2027-01-28 (-48d). Complete tasks 1 → 26.

Added:

| ID | Task | Duration | Start | Finish | Predecessors | Resources |
| --- | --- | --- | --- | --- | --- | --- |
| 17 | Verify dev service accounts | 1d? | 2026-05-11 | 2026-05-11 |  |  |
| 18 | Create Secret Manager baseline plan | 1d? | 2026-05-11 | 2026-05-11 |  |  |
| 19 | Create initial placeholder secrets | 1d? | 2026-05-11 | 2026-05-11 |  |  |
| 20 | Save IAM and Secret Manager setup notes | 1d? | 2026-05-11 | 2026-05-11 |  |  |
| 24 | Connect Cloud Run API to Cloud SQL and Secret Manager | 1d? | 2026-05-11 | 2026-05-11 |  |  |
| 29 | Build claim workspace API (CRUD) | 4d? | 2026-05-11 | 2026-05-14 | 28 | Backend |

Removed: 11 Confirm MVP boundaries and non-goals; 12 Map VETS Act / improved MRCA product assumptions; 13 Define claim scenarios and safety language; 14 Draft privacy, consent, AI-use and no-advice wording; 28 Build claim workspace API

Changed:

| ID | Task | Start | Finish | Duration | Complete | Predecessors | Other |
| --- | --- | --- | --- | --- | --- | --- | --- |
| 1 | **Phase 1: Product scope and compliance foundation** |  | 2026-06-03 → 2026-05-11 (-23d) | 18d? → 1d? | 7% → 100% |  |  |
| 2 | Confirm MVP product definition |  |  | 1d? → 1d |  |  |  |
| 3 | Confirm version 1 exclusions |  |  | 1d? → 1d | 25% → 100% |  |  |
| 4 | Define supported post-2026 claim scenarios | 2026-05-12 → 2026-05-11 (-1d) | 2026-05-12 → 2026-05-11 (-1d) | 1d? → 1d | 0% → 100% |  |  |
| 5 | Draft disclaimer and AI-use wording | 2026-05-13 → 2026-05-11 (-2d) | 2026-05-13 → 2026-05-11 (-2d) |  | 0% → 100% |  |  |
| 6 | Define first user journey | 2026-05-14 → 2026-05-11 (-3d) | 2026-05-14 → 2026-05-11 (-3d) |  | 0% → 100% |  |  |
| 7 | Define MVP feature list | 2026-05-15 → 2026-05-11 (-4d) | 2026-05-15 → 2026-05-11 (-4d) |  | 0% → 100% |  |  |
| 8 | Define first data objects | 2026-05-18 → 2026-05-11 (-7d) | 2026-05-18 → 2026-05-11 (-7d) |  | 0% → 100% |  | constraint none → start no earlier than 2026-05-11 |
| 9 | Define Phase 1 acceptance criteria | 2026-05-19 → 2026-05-11 (-8d) | 2026-05-19 → 2026-05-11 (-8d) |  | 0% → 100% |  | constraint none → start no earlier than 2026-05-11 |
| 10 | Review Phase 1 pack before build starts | 2026-05-20 → 2026-05-11 (-9d) | 2026-05-20 → 2026-05-11 (-9d) |  | 0% → 100% |  |  |
| 11 | **Phase 2: Google Cloud foundation** | 2026-06-04 → 2026-05-11 (-24d) | 2026-06-17 → 2026-05-12 (-36d) | 10d? → 2d? | 0% → 100% |  |  |
| 12 | Create Google Cloud dev/test/prod project structure | 2026-06-04 → 2026-05-11 (-24d) | 2026-06-05 → 2026-05-12 (-24d) |  | 0% → 100% | 16 → none |  |
| 13 | Enable core Google Cloud services | 2026-06-08 → 2026-05-11 (-28d) | 2026-06-08 → 2026-05-11 (-28d) |  | 0% → 100% |  |  |
| 14 | Configure IAM, service accounts and Secret Manager | 2026-06-09 → 2026-05-11 (-29d) | 2026-06-10 → 2026-05-12 (-29d) |  | 0% → 100% |  |  |
| 15 | Create baseline IAM/service account plan | 2026-06-02 → 2026-05-11 (-22d) | 2026-06-03 → 2026-05-11 (-23d) | 2d? → 1d? | 0% → 100% | Draft privacy, consent, AI-use and no-advice wording → none | was named Write first user journey and acceptance criteria; resources Product / Compliance → none; baseline start 2026-06-02 → none; baseline finish 2026-06-03 → none |
| 16 | Create dev service accounts | 2026-06-03 → 2026-05-11 (-23d) | 2026-06-03 → 2026-05-11 (-23d) | 0d? → 1d? | 0% → 100% | 15 → none | was named Milestone: Phase 1 complete; resources Product / Compliance → none; baseline start 2026-06-03 → none; baseline finish 2026-06-03 → none |
| 21 | Configure Firebase Authentication and App Check | 2026-06-11 → 2026-05-11 (-31d) | 2026-06-12 → 2026-05-12 (-31d) |  | 0% → 100% |  |  |
| 22 | Create Cloud Run API skeleton and CI/CD | 2026-06-15 → 2026-05-11 (-35d) | 2026-06-16 → 2026-05-12 (-35d) |  | 0% → 100% |  |  |
| 23 | Provision Cloud SQL PostgreSQL and Cloud Storage buckets | 2026-06-17 → 2026-05-11 (-37d) | 2026-06-17 → 2026-05-11 (-37d) |  | 0% → 100% |  |  |
| 25 | Milestone: Phase 2 complete | 2026-06-17 → 2026-05-11 (-37d) | 2026-06-17 → 2026-05-11 (-37d) |  | 0% → 100% |  |  |
| 26 | **Phase 3: Core backend and database** | 2026-06-18 → 2026-05-11 (-38d) | 2026-07-15 → 2026-05-28 (-48d) | 20d? → 14d? | 0% → 50% |  |  |
| 27 | Create database schema and migrations | 2026-06-18 → 2026-05-11 (-38d) | 2026-06-22 → 2026-05-13 (-40d) |  | 0% → 100% |  |  |
| 28 | Implement Firebase token verification and user service | 2026-06-23 → 2026-05-11 (-43d) | 2026-06-25 → 2026-05-13 (-43d) |  | 0% → 100% |  |  |
| 30 | Build condition and accepted-condition history APIs | 2026-07-02 → 2026-05-15 (-48d) | 2026-07-07 → 2026-05-20 (-48d) |  |  | Build claim workspace API → 29 |  |
| 31 | Build evidence metadata and audit APIs | 2026-07-08 → 2026-05-21 (-48d) | 2026-07-10 → 2026-05-25 (-46d) |  |  |  |  |
| 32 | Add backend tests and API documentation | 2026-07-13 → 2026-05-26 (-48d) | 2026-07-15 → 2026-05-28 (-48d) |  |  |  |  |
| 33 | Milestone: Phase 3 complete | 2026-07-15 → 2026-05-28 (-48d) | 2026-07-15 → 2026-05-28 (-48d) |  |  |  |  |
| 34 | **Phase 4: Web MVP shell** | 2026-07-16 → 2026-05-29 (-48d) | 2026-08-05 → 2026-06-18 (-48d) |  |  |  |  |
| 35 | Create Next.js app scaffolding and routing | 2026-07-16 → 2026-05-29 (-48d) | 2026-07-17 → 2026-06-01 (-46d) |  |  |  |  |
| 36 | Build login and session UI | 2026-07-20 → 2026-06-02 (-48d) | 2026-07-22 → 2026-06-04 (-48d) |  |  |  |  |
| 37 | Build dashboard and claim workspace list | 2026-07-23 → 2026-06-05 (-48d) | 2026-07-27 → 2026-06-09 (-48d) |  |  |  |  |
| 38 | Build new claim and pathway selector | 2026-07-28 → 2026-06-10 (-48d) | 2026-07-30 → 2026-06-12 (-48d) |  |  |  |  |
| 39 | Build condition intake UI | 2026-07-31 → 2026-06-15 (-46d) | 2026-08-04 → 2026-06-17 (-48d) |  |  |  |  |
| 40 | Build evidence checklist shell | 2026-08-05 → 2026-06-18 (-48d) | 2026-08-05 → 2026-06-18 (-48d) |  |  |  |  |
| 41 | Milestone: Phase 4 complete | 2026-08-05 → 2026-06-18 (-48d) | 2026-08-05 → 2026-06-18 (-48d) |  |  |  |  |
| 42 | **Phase 5: GARP M-aware question engine** | 2026-08-06 → 2026-06-19 (-48d) | 2026-09-02 → 2026-07-16 (-48d) |  |  |  |  |
| 43 | Create question template model and renderer | 2026-08-06 → 2026-06-19 (-48d) | 2026-08-10 → 2026-06-23 (-48d) |  |  |  |  |
| 44 | Build diagnosis, symptoms and treatment groups | 2026-08-11 → 2026-06-24 (-48d) | 2026-08-14 → 2026-06-29 (-46d) |  |  |  |  |
| 45 | Build stability, functional, lifestyle and work impact groups | 2026-08-17 → 2026-06-30 (-48d) | 2026-08-21 → 2026-07-06 (-46d) |  |  |  |  |
| 46 | Build worsening and previous compensation groups | 2026-08-24 → 2026-07-07 (-48d) | 2026-08-27 → 2026-07-10 (-48d) |  |  |  |  |
| 47 | Add save/resume validation and structured summary | 2026-08-28 → 2026-07-13 (-46d) | 2026-09-02 → 2026-07-16 (-48d) |  |  |  |  |
| 48 | Milestone: Phase 5 complete | 2026-09-02 → 2026-07-16 (-48d) | 2026-09-02 → 2026-07-16 (-48d) |  |  |  |  |
| 49 | **Phase 6: Evidence upload and gap tracker** | 2026-09-03 → 2026-07-17 (-48d) | 2026-09-23 → 2026-08-06 (-48d) |  |  |  |  |
| 50 | Build signed upload and download URL flow | 2026-09-03 → 2026-07-17 (-48d) | 2026-09-07 → 2026-07-21 (-48d) |  |  |  |  |
| 51 | Build evidence item tagging and condition linking | 2026-09-08 → 2026-07-22 (-48d) | 2026-09-10 → 2026-07-24 (-48d) |  |  |  |  |
| 52 | Build evidence status workflow | 2026-09-11 → 2026-07-27 (-46d) | 2026-09-15 → 2026-07-29 (-48d) |  |  |  |  |
| 53 | Build evidence gap rules engine | 2026-09-16 → 2026-07-30 (-48d) | 2026-09-21 → 2026-08-04 (-48d) |  |  |  |  |
| 54 | Build gap dashboard and reminder prompts | 2026-09-22 → 2026-08-05 (-48d) | 2026-09-23 → 2026-08-06 (-48d) |  |  |  |  |
| 55 | Milestone: Phase 6 complete | 2026-09-23 → 2026-08-06 (-48d) | 2026-09-23 → 2026-08-06 (-48d) |  |  |  |  |
| 56 | **Phase 7: AI/RAG knowledge base** | 2026-09-03 → 2026-07-17 (-48d) | 2026-10-07 → 2026-08-20 (-48d) |  |  |  |  |
| 57 | Create approved source registry and knowledge base structure | 2026-09-03 → 2026-07-17 (-48d) | 2026-09-08 → 2026-07-22 (-48d) |  |  |  |  |
| 58 | Load GARP M, DVA reform references and internal templates | 2026-09-09 → 2026-07-23 (-48d) | 2026-09-14 → 2026-07-28 (-48d) |  |  |  |  |
| 59 | Build RAG retrieval API | 2026-09-15 → 2026-07-29 (-48d) | 2026-09-21 → 2026-08-04 (-48d) |  |  |  |  |
| 60 | Build prompt templates and safety guardrails | 2026-09-22 → 2026-08-05 (-48d) | 2026-09-25 → 2026-08-10 (-46d) |  |  |  |  |
| 61 | Generate veteran statement and worsening summary drafts | 2026-09-28 → 2026-08-11 (-48d) | 2026-10-01 → 2026-08-14 (-48d) |  |  |  |  |
| 62 | Generate doctor questions, evidence gap summary and doctor letter | 2026-10-02 → 2026-08-17 (-46d) | 2026-10-07 → 2026-08-20 (-48d) |  |  |  |  |
| 63 | Milestone: Phase 7 complete | 2026-10-07 → 2026-08-20 (-48d) | 2026-10-07 → 2026-08-20 (-48d) |  |  |  |  |
| 64 | **Phase 8: Claim Starter Pack document generation** | 2026-10-08 → 2026-08-21 (-48d) | 2026-10-28 → 2026-09-10 (-48d) |  |  |  |  |
| 65 | Design DOCX starter pack templates | 2026-10-08 → 2026-08-21 (-48d) | 2026-10-13 → 2026-08-26 (-48d) |  |  |  |  |
| 66 | Build document generation service | 2026-10-14 → 2026-08-27 (-48d) | 2026-10-19 → 2026-09-01 (-48d) |  |  |  |  |
| 67 | Add PDF conversion and storage versioning | 2026-10-20 → 2026-09-02 (-48d) | 2026-10-22 → 2026-09-04 (-48d) |  |  |  |  |
| 68 | Add document download signed URL flow | 2026-10-23 → 2026-09-07 (-46d) | 2026-10-26 → 2026-09-08 (-48d) |  |  |  |  |
| 69 | Enforce reviewed-only content and test exports | 2026-10-27 → 2026-09-09 (-48d) | 2026-10-28 → 2026-09-10 (-48d) |  |  |  |  |
| 70 | Milestone: Phase 8 complete | 2026-10-28 → 2026-09-10 (-48d) | 2026-10-28 → 2026-09-10 (-48d) |  |  |  |  |
| 71 | **Phase 9: Doctor guidance pack** | 2026-10-29 → 2026-09-11 (-48d) | 2026-11-11 → 2026-09-24 (-48d) |  |  |  |  |
| 72 | Design doctor guidance pack template | 2026-10-29 → 2026-09-11 (-48d) | 2026-11-02 → 2026-09-15 (-48d) |  |  |  |  |
| 73 | Build clinical question generation workflow | 2026-11-03 → 2026-09-16 (-48d) | 2026-11-05 → 2026-09-18 (-48d) |  |  |  |  |
| 74 | Add doctor-specific disclaimer and review checklist | 2026-11-06 → 2026-09-21 (-46d) | 2026-11-09 → 2026-09-22 (-48d) |  |  |  |  |
| 75 | Export and test doctor guidance pack | 2026-11-10 → 2026-09-23 (-48d) | 2026-11-11 → 2026-09-24 (-48d) |  |  |  |  |
| 76 | Milestone: Phase 9 complete | 2026-11-11 → 2026-09-24 (-48d) | 2026-11-11 → 2026-09-24 (-48d) |  |  |  |  |

| ID | Task | Start | Finish |
| --- | --- | --- | --- |
| 77 | **Phase 10: Admin knowledge and template manager** | 2026-10-08 → 2026-08-21 (-48d) | 2026-11-04 → 2026-09-17 (-48d) |
| 78 | Build admin roles and access control | 2026-10-08 → 2026-08-21 (-48d) | 2026-10-12 → 2026-08-25 (-48d) |
| 79 | Build source metadata manager | 2026-10-13 → 2026-08-26 (-48d) | 2026-10-16 → 2026-08-31 (-46d) |
| 80 | Build question and document template editor | 2026-10-19 → 2026-09-01 (-48d) | 2026-10-23 → 2026-09-07 (-46d) |
| 81 | Build prompt and disclaimer versioning | 2026-10-26 → 2026-09-08 (-48d) | 2026-10-29 → 2026-09-11 (-48d) |
| 82 | Build knowledge base audit review view | 2026-10-30 → 2026-09-14 (-46d) | 2026-11-04 → 2026-09-17 (-48d) |
| 83 | Milestone: Phase 10 complete | 2026-11-04 → 2026-09-17 (-48d) | 2026-11-04 → 2026-09-17 (-48d) |
| 84 | **Phase 11: Android and iOS app MVP** | 2026-10-29 → 2026-09-11 (-48d) | 2026-12-23 → 2026-11-05 (-48d) |
| 85 | Create MAUI app shell and shared services | 2026-10-29 → 2026-09-11 (-48d) | 2026-11-04 → 2026-09-17 (-48d) |
| 86 | Integrate Firebase Authentication | 2026-11-05 → 2026-09-18 (-48d) | 2026-11-11 → 2026-09-24 (-48d) |
| 87 | Build dashboard and claim workspace screens | 2026-11-12 → 2026-09-25 (-48d) | 2026-11-19 → 2026-10-02 (-48d) |
| 88 | Build condition intake and question engine screens | 2026-11-20 → 2026-10-05 (-46d) | 2026-12-01 → 2026-10-14 (-48d) |
| 89 | Build evidence checklist and upload flow | 2026-12-02 → 2026-10-15 (-48d) | 2026-12-10 → 2026-10-23 (-48d) |
| 90 | Build AI draft review and document download screens | 2026-12-11 → 2026-10-26 (-46d) | 2026-12-18 → 2026-11-02 (-46d) |
| 91 | Complete Android and iOS device testing | 2026-12-21 → 2026-11-03 (-48d) | 2026-12-23 → 2026-11-05 (-48d) |
| 92 | Milestone: Phase 11 complete | 2026-12-23 → 2026-11-05 (-48d) | 2026-12-23 → 2026-11-05 (-48d) |
| 93 | **Phase 12: Security, privacy and production hardening** | 2026-10-29 → 2026-09-11 (-48d) | 2026-12-09 → 2026-10-22 (-48d) |
| 94 | Review RBAC enforcement and audit logging | 2026-10-29 → 2026-09-11 (-48d) | 2026-11-04 → 2026-09-17 (-48d) |
| 95 | Build data export and deletion workflows | 2026-11-05 → 2026-09-18 (-48d) | 2026-11-11 → 2026-09-24 (-48d) |
| 96 | Create backup and disaster recovery process | 2026-11-12 → 2026-09-25 (-48d) | 2026-11-17 → 2026-09-30 (-48d) |
| 97 | Add rate limiting, monitoring and error alerts | 2026-11-18 → 2026-10-01 (-48d) | 2026-11-23 → 2026-10-06 (-48d) |
| 98 | Add consent tracking and AI disclosure tracking | 2026-11-24 → 2026-10-07 (-48d) | 2026-11-27 → 2026-10-12 (-46d) |
| 99 | Draft privacy policy, terms and support process | 2026-11-30 → 2026-10-13 (-48d) | 2026-12-03 → 2026-10-16 (-48d) |
| 100 | Prepare penetration test and remediation buffer | 2026-12-04 → 2026-10-19 (-46d) | 2026-12-09 → 2026-10-22 (-48d) |
| 101 | Milestone: Phase 12 complete | 2026-12-09 → 2026-10-22 (-48d) | 2026-12-09 → 2026-10-22 (-48d) |
| 102 | **Phase 13: Private pilot** | 2026-12-24 → 2026-11-06 (-48d) | 2027-02-03 → 2026-12-17 (-48d) |
| 103 | Recruit and onboard private pilot users | 2026-12-24 → 2026-11-06 (-48d) | 2026-12-30 → 2026-11-12 (-48d) |
| 104 | Run support and feedback capture process | 2026-12-31 → 2026-11-13 (-48d) | 2027-01-06 → 2026-11-19 (-48d) |
| 105 | Test veteran claim-preparation workflow | 2027-01-07 → 2026-11-20 (-48d) | 2027-01-13 → 2026-11-26 (-48d) |
| 106 | Review doctor and advocate pack usefulness | 2027-01-14 → 2026-11-27 (-48d) | 2027-01-20 → 2026-12-03 (-48d) |
| 107 | Fix priority issues from pilot | 2027-01-21 → 2026-12-04 (-48d) | 2027-01-28 → 2026-12-11 (-48d) |
| 108 | Prepare pilot outcome report and go/no-go decision | 2027-01-29 → 2026-12-14 (-46d) | 2027-02-03 → 2026-12-17 (-48d) |
| 109 | Milestone: Phase 13 complete | 2027-02-03 → 2026-12-17 (-48d) | 2027-02-03 → 2026-12-17 (-48d) |
| 110 | **Phase 14: Commercial launch preparation** | 2027-02-04 → 2026-12-18 (-48d) | 2027-03-17 → 2027-01-28 (-48d) |
| 111 | Decide and implement billing/subscription model | 2027-02-04 → 2026-12-18 (-48d) | 2027-02-10 → 2026-12-24 (-48d) |
| 112 | Build organisation account model | 2027-02-11 → 2026-12-25 (-48d) | 2027-02-17 → 2026-12-31 (-48d) |
| 113 | Set up support inbox and help centre | 2027-02-18 → 2027-01-01 (-48d) | 2027-02-24 → 2027-01-07 (-48d) |
| 114 | Create marketing site and onboarding content | 2027-02-25 → 2027-01-08 (-48d) | 2027-03-03 → 2027-01-14 (-48d) |
| 115 | Prepare App Store and Play Store materials | 2027-03-04 → 2027-01-15 (-48d) | 2027-03-10 → 2027-01-21 (-48d) |
| 116 | Complete launch readiness and production operations | 2027-03-11 → 2027-01-22 (-48d) | 2027-03-17 → 2027-01-28 (-48d) |
| 117 | Milestone: Phase 14 complete | 2027-03-17 → 2027-01-28 (-48d) | 2027-03-17 → 2027-01-28 (-48d) |

## Version 3 (saved 2026-05-12)

Note of the change: Define Phase 5 GARP M question engine scope

Last finish 2027-01-28 → 2026-12-22 (-37d). Complete tasks 26 → 58.

Added:

| ID | Task | Duration | Start | Finish | Predecessors | Resources |
| --- | --- | --- | --- | --- | --- | --- |
| 31 | Build guided question response API | 1d? | 2026-05-12 | 2026-05-12 | 30 |  |
| 33 | Build evidence upload URL API | 1d? | 2026-05-12 | 2026-05-12 | 32 |  |
| 34 | Build evidence gap tracker API | 1d? | 2026-05-12 | 2026-05-12 | 33 |  |
| 35 | Build AI draft metadata API | 1d? | 2026-05-12 | 2026-05-12 | 34 |  |
| 36 | Build generated document metadata API | 1d? | 2026-05-12 | 2026-05-12 | 35 |  |
| 37 | Refactor shared auth and ownership helpers | 1d? | 2026-05-12 | 2026-05-12 | 36 |  |
| 38 | Create API smoke test script | 1d? | 2026-05-12 | 2026-05-12 | 37 |  |
| 39 | Redeploy and verify Phase 3 backend | 1d? | 2026-05-12 | 2026-05-12 | 38 |  |
| 44 | Configure web app environment variables | 1d | 2026-05-12 | 2026-05-12 | 43 |  |
| 45 | Connect Firebase web authentication | 1d | 2026-05-12 | 2026-05-12 | 44 |  |
| 49 | Build claim workspace detail page | 1d | 2026-05-12 | 2026-05-12 | 48 |  |
| 51 | Build accepted-condition history UI | 1d | 2026-05-12 | 2026-05-12 | 50 |  |
| 52 | Build guided question response UI | 1d | 2026-05-12 | 2026-05-12 | 51 |  |
| 54 | Build evidence metadata UI | 1d | 2026-05-12 | 2026-05-12 | 53 |  |
| 55 | Build evidence upload UI | 1d | 2026-05-12 | 2026-05-12 | 54 |  |
| 56 | Build evidence gap tracker UI | 1d | 2026-05-12 | 2026-05-12 | 55 | Web |
| 57 | Build AI draft review UI | 1d | 2026-05-12 | 2026-05-12 | 56 | Web |
| 58 | Build generated document list UI | 1d | 2026-05-12 | 2026-05-12 | 57 | Web |
| 59 | Add protected route handling | 1d | 2026-05-12 | 2026-05-12 | 58 | Web |
| 60 | Add API client service layer | 1d | 2026-05-12 | 2026-05-12 | 59 | Web |
| 61 | Add web smoke test checklist | 1d | 2026-05-12 | 2026-05-12 | 60 | Web |

Changed:

| ID | Task | Start | Finish | Duration | Complete | Predecessors | Other |
| --- | --- | --- | --- | --- | --- | --- | --- |
| 3 | Confirm version 1 exclusions |  |  |  |  | none → 2 |  |
| 12 | Create Google Cloud dev/test/prod project structure |  |  |  |  | none → 10 |  |
| 15 | Create baseline IAM/service account plan |  |  |  |  | none → 14 |  |
| 16 | Create dev service accounts |  |  |  |  | none → 15 |  |
| 17 | Verify dev service accounts |  |  |  |  | none → 16 |  |
| 18 | Create Secret Manager baseline plan |  |  |  |  | none → 17 |  |
| 19 | Create initial placeholder secrets |  |  |  |  | none → 18 |  |
| 20 | Save IAM and Secret Manager setup notes |  |  |  |  | none → 19 |  |
| 21 | Configure Firebase Authentication and App Check |  |  |  |  | 14 → 20 |  |
| 24 | Connect Cloud Run API to Cloud SQL and Secret Manager |  |  |  |  | none → 23 |  |
| 25 | Milestone: Phase 2 complete |  |  |  |  | 23 → 24 |  |
| 26 | **Phase 3: Core backend and database** | 2026-05-11 → 2026-05-12 (+1d) | 2026-05-28 → 2026-05-15 (-13d) | 14d? → 4d? | 50% → 100% |  |  |
| 27 | Create database schema and migrations | 2026-05-11 → 2026-05-12 (+1d) | 2026-05-13 → 2026-05-14 (+1d) |  |  |  |  |
| 28 | Implement Firebase token verification and user service | 2026-05-11 → 2026-05-12 (+1d) | 2026-05-13 → 2026-05-14 (+1d) |  |  |  |  |
| 29 | Build claim workspace API (CRUD) | 2026-05-11 → 2026-05-12 (+1d) | 2026-05-14 → 2026-05-15 (+1d) |  |  |  |  |
| 30 | Build condition and accepted-condition history APIs | 2026-05-15 → 2026-05-12 (-3d) | 2026-05-20 → 2026-05-15 (-5d) |  | 0% → 100% |  |  |
| 32 | Build evidence metadata and audit APIs | 2026-05-21 → 2026-05-12 (-9d) | 2026-05-25 → 2026-05-14 (-11d) |  | 0% → 100% | 30 → 31 |  |
| 40 | Add backend tests and API documentation | 2026-05-26 → 2026-05-12 (-14d) | 2026-05-28 → 2026-05-14 (-14d) |  | 0% → 100% | 32 → 39 |  |
| 41 | Milestone: Phase 3 complete | 2026-05-28 → 2026-05-12 (-16d) | 2026-05-28 → 2026-05-12 (-16d) |  | 0% → 100% |  |  |
| 42 | **Phase 4: Web MVP shell** | 2026-05-29 → 2026-05-12 (-17d) | 2026-06-18 → 2026-05-12 (-37d) | 15d? → 1d? | 0% → 100% | none → 40 |  |
| 43 | Create Next.js app scaffolding and routing | 2026-05-29 → 2026-05-12 (-17d) | 2026-06-01 → 2026-05-12 (-20d) | 2d? → 1d | 0% → 100% |  | resources Web → none; baseline start 2026-07-16 → none; baseline finish 2026-07-17 → none |
| 46 | Build login and session UI | 2026-06-02 → 2026-05-12 (-21d) | 2026-06-04 → 2026-05-12 (-23d) | 3d? → 1d | 0% → 100% | 43 → 45 | resources Web → none; baseline start 2026-07-20 → none; baseline finish 2026-07-22 → none |
| 47 | Build dashboard and claim workspace list | 2026-06-05 → 2026-05-12 (-24d) | 2026-06-09 → 2026-05-12 (-28d) | 3d? → 1d | 0% → 100% |  | resources Web → none; baseline start 2026-07-23 → none; baseline finish 2026-07-27 → none |
| 48 | Build new claim and pathway selector | 2026-06-10 → 2026-05-12 (-29d) | 2026-06-12 → 2026-05-12 (-31d) | 3d? → 1d | 0% → 100% |  | resources Web → none; baseline start 2026-07-28 → none; baseline finish 2026-07-30 → none |
| 50 | Build condition intake UI | 2026-06-15 → 2026-05-12 (-34d) | 2026-06-17 → 2026-05-12 (-36d) | 3d? → 1d | 0% → 100% | 48 → 49 | resources Web → none; baseline start 2026-07-31 → none; baseline finish 2026-08-04 → none |
| 53 | Build evidence checklist shell | 2026-06-18 → 2026-05-12 (-37d) | 2026-06-18 → 2026-05-12 (-37d) | 1d? → 1d | 0% → 100% | 50 → 52 | resources Web → none; baseline start 2026-08-05 → none; baseline finish 2026-08-05 → none |
| 62 | Milestone: Phase 4 complete | 2026-06-18 → 2026-05-12 (-37d) | 2026-06-18 → 2026-05-12 (-37d) |  | 0% → 100% | 53 → 61 |  |
| 63 | **Phase 5: GARP M-aware question engine** | 2026-06-19 → 2026-05-13 (-37d) | 2026-07-16 → 2026-06-09 (-37d) |  |  | none → 61 |  |
| 64 | Create question template model and renderer | 2026-06-19 → 2026-05-13 (-37d) | 2026-06-23 → 2026-05-15 (-39d) |  |  |  |  |
| 65 | Build diagnosis, symptoms and treatment groups | 2026-06-24 → 2026-05-18 (-37d) | 2026-06-29 → 2026-05-21 (-39d) |  |  |  |  |
| 66 | Build stability, functional, lifestyle and work impact groups | 2026-06-30 → 2026-05-22 (-39d) | 2026-07-06 → 2026-05-28 (-39d) |  |  |  |  |
| 67 | Build worsening and previous compensation groups | 2026-07-07 → 2026-05-29 (-39d) | 2026-07-10 → 2026-06-03 (-37d) |  |  |  |  |
| 68 | Add save/resume validation and structured summary | 2026-07-13 → 2026-06-04 (-39d) | 2026-07-16 → 2026-06-09 (-37d) |  |  |  |  |
| 69 | Milestone: Phase 5 complete | 2026-07-16 → 2026-06-09 (-37d) | 2026-07-16 → 2026-06-09 (-37d) |  |  |  |  |
| 70 | **Phase 6: Evidence upload and gap tracker** | 2026-07-17 → 2026-06-10 (-37d) | 2026-08-06 → 2026-06-30 (-37d) |  |  | none → 69 |  |
| 71 | Build signed upload and download URL flow | 2026-07-17 → 2026-06-10 (-37d) | 2026-07-21 → 2026-06-12 (-39d) |  |  |  |  |
| 72 | Build evidence item tagging and condition linking | 2026-07-22 → 2026-06-15 (-37d) | 2026-07-24 → 2026-06-17 (-37d) |  |  |  |  |
| 73 | Build evidence status workflow | 2026-07-27 → 2026-06-18 (-39d) | 2026-07-29 → 2026-06-22 (-37d) |  |  |  |  |
| 74 | Build evidence gap rules engine | 2026-07-30 → 2026-06-23 (-37d) | 2026-08-04 → 2026-06-26 (-39d) |  |  |  |  |
| 75 | Build gap dashboard and reminder prompts | 2026-08-05 → 2026-06-29 (-37d) | 2026-08-06 → 2026-06-30 (-37d) |  |  |  |  |
| 76 | Milestone: Phase 6 complete | 2026-08-06 → 2026-06-30 (-37d) | 2026-08-06 → 2026-06-30 (-37d) |  |  |  |  |
| 77 | **Phase 7: AI/RAG knowledge base** | 2026-07-17 → 2026-06-10 (-37d) | 2026-08-20 → 2026-07-14 (-37d) |  |  |  |  |
| 78 | Create approved source registry and knowledge base structure | 2026-07-17 → 2026-06-10 (-37d) | 2026-07-22 → 2026-06-15 (-37d) |  |  |  |  |
| 79 | Load GARP M, DVA reform references and internal templates | 2026-07-23 → 2026-06-16 (-37d) | 2026-07-28 → 2026-06-19 (-39d) |  |  |  |  |
| 80 | Build RAG retrieval API | 2026-07-29 → 2026-06-22 (-37d) | 2026-08-04 → 2026-06-26 (-39d) |  |  |  |  |
| 81 | Build prompt templates and safety guardrails | 2026-08-05 → 2026-06-29 (-37d) | 2026-08-10 → 2026-07-02 (-39d) |  |  |  |  |
| 82 | Generate veteran statement and worsening summary drafts | 2026-08-11 → 2026-07-03 (-39d) | 2026-08-14 → 2026-07-08 (-37d) |  |  |  |  |
| 83 | Generate doctor questions, evidence gap summary and doctor letter | 2026-08-17 → 2026-07-09 (-39d) | 2026-08-20 → 2026-07-14 (-37d) |  |  |  |  |
| 84 | Milestone: Phase 7 complete | 2026-08-20 → 2026-07-14 (-37d) | 2026-08-20 → 2026-07-14 (-37d) |  |  |  |  |
| 85 | **Phase 8: Claim Starter Pack document generation** | 2026-08-21 → 2026-07-15 (-37d) | 2026-09-10 → 2026-08-04 (-37d) |  |  |  |  |
| 86 | Design DOCX starter pack templates | 2026-08-21 → 2026-07-15 (-37d) | 2026-08-26 → 2026-07-20 (-37d) |  |  |  |  |
| 87 | Build document generation service | 2026-08-27 → 2026-07-21 (-37d) | 2026-09-01 → 2026-07-24 (-39d) |  |  |  |  |
| 88 | Add PDF conversion and storage versioning | 2026-09-02 → 2026-07-27 (-37d) | 2026-09-04 → 2026-07-29 (-37d) |  |  |  |  |
| 89 | Add document download signed URL flow | 2026-09-07 → 2026-07-30 (-39d) | 2026-09-08 → 2026-07-31 (-39d) |  |  |  |  |
| 90 | Enforce reviewed-only content and test exports | 2026-09-09 → 2026-08-03 (-37d) | 2026-09-10 → 2026-08-04 (-37d) |  |  |  |  |
| 91 | Milestone: Phase 8 complete | 2026-09-10 → 2026-08-04 (-37d) | 2026-09-10 → 2026-08-04 (-37d) |  |  |  |  |
| 92 | **Phase 9: Doctor guidance pack** | 2026-09-11 → 2026-08-05 (-37d) | 2026-09-24 → 2026-08-18 (-37d) |  |  |  |  |
| 93 | Design doctor guidance pack template | 2026-09-11 → 2026-08-05 (-37d) | 2026-09-15 → 2026-08-07 (-39d) |  |  |  |  |
| 94 | Build clinical question generation workflow | 2026-09-16 → 2026-08-10 (-37d) | 2026-09-18 → 2026-08-12 (-37d) |  |  |  |  |
| 95 | Add doctor-specific disclaimer and review checklist | 2026-09-21 → 2026-08-13 (-39d) | 2026-09-22 → 2026-08-14 (-39d) |  |  |  |  |
| 96 | Export and test doctor guidance pack | 2026-09-23 → 2026-08-17 (-37d) | 2026-09-24 → 2026-08-18 (-37d) |  |  |  |  |
| 97 | Milestone: Phase 9 complete | 2026-09-24 → 2026-08-18 (-37d) | 2026-09-24 → 2026-08-18 (-37d) |  |  |  |  |
| 98 | **Phase 10: Admin knowledge and template manager** | 2026-08-21 → 2026-07-15 (-37d) | 2026-09-17 → 2026-08-11 (-37d) |  |  |  |  |
| 99 | Build admin roles and access control | 2026-08-21 → 2026-07-15 (-37d) | 2026-08-25 → 2026-07-17 (-39d) |  |  |  |  |
| 100 | Build source metadata manager | 2026-08-26 → 2026-07-20 (-37d) | 2026-08-31 → 2026-07-23 (-39d) |  |  |  |  |
| 101 | Build question and document template editor | 2026-09-01 → 2026-07-24 (-39d) | 2026-09-07 → 2026-07-30 (-39d) |  |  |  |  |
| 102 | Build prompt and disclaimer versioning | 2026-09-08 → 2026-07-31 (-39d) | 2026-09-11 → 2026-08-05 (-37d) |  |  |  |  |
| 103 | Build knowledge base audit review view | 2026-09-14 → 2026-08-06 (-39d) | 2026-09-17 → 2026-08-11 (-37d) |  |  |  |  |
| 104 | Milestone: Phase 10 complete | 2026-09-17 → 2026-08-11 (-37d) | 2026-09-17 → 2026-08-11 (-37d) |  |  |  |  |
| 105 | **Phase 11: Android and iOS app MVP** | 2026-09-11 → 2026-08-05 (-37d) | 2026-11-05 → 2026-09-29 (-37d) |  |  |  |  |

| ID | Task | Start | Finish |
| --- | --- | --- | --- |
| 106 | Create MAUI app shell and shared services | 2026-09-11 → 2026-08-05 (-37d) | 2026-09-17 → 2026-08-11 (-37d) |
| 107 | Integrate Firebase Authentication | 2026-09-18 → 2026-08-12 (-37d) | 2026-09-24 → 2026-08-18 (-37d) |
| 108 | Build dashboard and claim workspace screens | 2026-09-25 → 2026-08-19 (-37d) | 2026-10-02 → 2026-08-26 (-37d) |
| 109 | Build condition intake and question engine screens | 2026-10-05 → 2026-08-27 (-39d) | 2026-10-14 → 2026-09-07 (-37d) |
| 110 | Build evidence checklist and upload flow | 2026-10-15 → 2026-09-08 (-37d) | 2026-10-23 → 2026-09-16 (-37d) |
| 111 | Build AI draft review and document download screens | 2026-10-26 → 2026-09-17 (-39d) | 2026-11-02 → 2026-09-24 (-39d) |
| 112 | Complete Android and iOS device testing | 2026-11-03 → 2026-09-25 (-39d) | 2026-11-05 → 2026-09-29 (-37d) |
| 113 | Milestone: Phase 11 complete | 2026-11-05 → 2026-09-29 (-37d) | 2026-11-05 → 2026-09-29 (-37d) |
| 114 | **Phase 12: Security, privacy and production hardening** | 2026-09-11 → 2026-08-05 (-37d) | 2026-10-22 → 2026-09-15 (-37d) |
| 115 | Review RBAC enforcement and audit logging | 2026-09-11 → 2026-08-05 (-37d) | 2026-09-17 → 2026-08-11 (-37d) |
| 116 | Build data export and deletion workflows | 2026-09-18 → 2026-08-12 (-37d) | 2026-09-24 → 2026-08-18 (-37d) |
| 117 | Create backup and disaster recovery process | 2026-09-25 → 2026-08-19 (-37d) | 2026-09-30 → 2026-08-24 (-37d) |
| 118 | Add rate limiting, monitoring and error alerts | 2026-10-01 → 2026-08-25 (-37d) | 2026-10-06 → 2026-08-28 (-39d) |
| 119 | Add consent tracking and AI disclosure tracking | 2026-10-07 → 2026-08-31 (-37d) | 2026-10-12 → 2026-09-03 (-39d) |
| 120 | Draft privacy policy, terms and support process | 2026-10-13 → 2026-09-04 (-39d) | 2026-10-16 → 2026-09-09 (-37d) |
| 121 | Prepare penetration test and remediation buffer | 2026-10-19 → 2026-09-10 (-39d) | 2026-10-22 → 2026-09-15 (-37d) |
| 122 | Milestone: Phase 12 complete | 2026-10-22 → 2026-09-15 (-37d) | 2026-10-22 → 2026-09-15 (-37d) |
| 123 | **Phase 13: Private pilot** | 2026-11-06 → 2026-09-30 (-37d) | 2026-12-17 → 2026-11-10 (-37d) |
| 124 | Recruit and onboard private pilot users | 2026-11-06 → 2026-09-30 (-37d) | 2026-11-12 → 2026-10-06 (-37d) |
| 125 | Run support and feedback capture process | 2026-11-13 → 2026-10-07 (-37d) | 2026-11-19 → 2026-10-13 (-37d) |
| 126 | Test veteran claim-preparation workflow | 2026-11-20 → 2026-10-14 (-37d) | 2026-11-26 → 2026-10-20 (-37d) |
| 127 | Review doctor and advocate pack usefulness | 2026-11-27 → 2026-10-21 (-37d) | 2026-12-03 → 2026-10-27 (-37d) |
| 128 | Fix priority issues from pilot | 2026-12-04 → 2026-10-28 (-37d) | 2026-12-11 → 2026-11-04 (-37d) |
| 129 | Prepare pilot outcome report and go/no-go decision | 2026-12-14 → 2026-11-05 (-39d) | 2026-12-17 → 2026-11-10 (-37d) |
| 130 | Milestone: Phase 13 complete | 2026-12-17 → 2026-11-10 (-37d) | 2026-12-17 → 2026-11-10 (-37d) |
| 131 | **Phase 14: Commercial launch preparation** | 2026-12-18 → 2026-11-11 (-37d) | 2027-01-28 → 2026-12-22 (-37d) |
| 132 | Decide and implement billing/subscription model | 2026-12-18 → 2026-11-11 (-37d) | 2026-12-24 → 2026-11-17 (-37d) |
| 133 | Build organisation account model | 2026-12-25 → 2026-11-18 (-37d) | 2026-12-31 → 2026-11-24 (-37d) |
| 134 | Set up support inbox and help centre | 2027-01-01 → 2026-11-25 (-37d) | 2027-01-07 → 2026-12-01 (-37d) |
| 135 | Create marketing site and onboarding content | 2027-01-08 → 2026-12-02 (-37d) | 2027-01-14 → 2026-12-08 (-37d) |
| 136 | Prepare App Store and Play Store materials | 2027-01-15 → 2026-12-09 (-37d) | 2027-01-21 → 2026-12-15 (-37d) |
| 137 | Complete launch readiness and production operations | 2027-01-22 → 2026-12-16 (-37d) | 2027-01-28 → 2026-12-22 (-37d) |
| 138 | Milestone: Phase 14 complete | 2027-01-28 → 2026-12-22 (-37d) | 2027-01-28 → 2026-12-22 (-37d) |

## Version 4 (saved 2026-05-13)

Note of the change: Add Phase 5 smoke test checklist

Last finish 2026-12-22 → 2026-11-20 (-32d). Complete tasks 58 → 76.

Added:

| ID | Task | Duration | Start | Finish | Predecessors | Resources |
| --- | --- | --- | --- | --- | --- | --- |
| 69 | Build stability and treatment response question group | 1d | 2026-05-13 | 2026-05-13 | 68 |  |
| 70 | Build functional, lifestyle and work impact question group | 1d | 2026-05-13 | 2026-05-13 | 69 |  |
| 71 | Build worsening and previous compensation question group | 1d | 2026-05-13 | 2026-05-13 | 70 |  |
| 72 | Build evidence gaps and appointment preparation question group | 1d | 2026-05-13 | 2026-05-13 | 71 |  |
| 73 | Connect question engine to existing question response API | 1d | 2026-05-13 | 2026-05-13 | 72 |  |
| 74 | Fix GARP M backend question group mapping | 1d | 2026-05-13 | 2026-05-13 | 73 |  |
| 75 | Improve GARP M date picker controls | 1d | 2026-05-13 | 2026-05-13 | 74 |  |
| 76 | Fix condition intake diagnosis status and date picker | 1d | 2026-05-13 | 2026-05-13 | 75 |  |
| 77 | Standardise remaining web date picker controls | 1d | 2026-05-13 | 2026-05-13 | 76 |  |
| 78 | Add save and resume support | 1d | 2026-05-13 | 2026-05-13 | 77 |  |
| 79 | Add validation and missing-answer prompts | 1d | 2026-05-13 | 2026-05-13 | 78 |  |
| 80 | Build structured assessment summary screen | 1d | 2026-05-13 | 2026-05-13 | 79 | Product / Compliance |
| 81 | Add workspace detail links to question engine | 1d | 2026-05-14 | 2026-05-14 | 80 | Product / Compliance |
| 82 | Add backend/frontend smoke test checklist updates | 1d | 2026-05-15 | 2026-05-15 | 81 | Product / Compliance |
| 83 | Add Phase 5 documentation | 1d | 2026-05-18 | 2026-05-18 | 82 | Product / Compliance |

Changed:

| ID | Task | Start | Finish | Duration | Complete | Predecessors | Other |
| --- | --- | --- | --- | --- | --- | --- | --- |
| 63 | **Phase 5: GARP M-aware question engine** |  | 2026-06-09 → 2026-05-19 (-21d) | 20d? → 5d | 0% → 86% |  |  |
| 64 | Define Phase 5 scope and safety boundary |  | 2026-05-15 → 2026-05-13 (-2d) | 3d? → 1d | 0% → 100% |  | was named Create question template model and renderer; resources Product / Compliance → none; baseline start 2026-08-06 → none; baseline finish 2026-08-10 → none |
| 65 | Create question template model | 2026-05-18 → 2026-05-13 (-5d) | 2026-05-21 → 2026-05-13 (-8d) | 4d? → 1d | 0% → 100% |  | was named Build diagnosis, symptoms and treatment groups; resources Product / Compliance → none; baseline start 2026-08-11 → none; baseline finish 2026-08-14 → none |
| 66 | Create GARP M-aware question group structure | 2026-05-22 → 2026-05-13 (-9d) | 2026-05-28 → 2026-05-13 (-15d) | 5d? → 1d | 0% → 100% |  | was named Build stability, functional, lifestyle and work impact groups; resources Product / Compliance → none; baseline start 2026-08-17 → none; baseline finish 2026-08-21 → none |
| 67 | Build reusable question renderer | 2026-05-29 → 2026-05-13 (-16d) | 2026-06-03 → 2026-05-13 (-21d) | 4d? → 1d | 0% → 100% |  | was named Build worsening and previous compensation groups; resources Product / Compliance → none; baseline start 2026-08-24 → none; baseline finish 2026-08-27 → none |
| 68 | Build diagnosis, symptoms and treatment question group | 2026-06-04 → 2026-05-13 (-22d) | 2026-06-09 → 2026-05-13 (-27d) | 4d? → 1d | 0% → 100% |  | was named Add save/resume validation and structured summary; resources Product / Compliance → none; baseline start 2026-08-28 → none; baseline finish 2026-09-02 → none |
| 84 | Milestone: Phase 5 complete | 2026-06-09 → 2026-05-19 (-21d) | 2026-06-09 → 2026-05-19 (-21d) | 0d? → 1d |  | 68 → 83 | baseline start 2026-09-02 → 2026-08-28 |
| 85 | **Phase 6: Evidence upload and gap tracker** | 2026-06-10 → 2026-05-11 (-30d) | 2026-06-30 → 2026-05-29 (-32d) |  |  | 84 → none |  |
| 86 | Build signed upload and download URL flow | 2026-06-10 → 2026-05-11 (-30d) | 2026-06-12 → 2026-05-13 (-30d) |  |  | 84 → none |  |
| 87 | Build evidence item tagging and condition linking | 2026-06-15 → 2026-05-14 (-32d) | 2026-06-17 → 2026-05-18 (-30d) |  |  |  |  |
| 88 | Build evidence status workflow | 2026-06-18 → 2026-05-19 (-30d) | 2026-06-22 → 2026-05-21 (-32d) |  |  |  |  |
| 89 | Build evidence gap rules engine | 2026-06-23 → 2026-05-22 (-32d) | 2026-06-26 → 2026-05-27 (-30d) |  |  |  |  |
| 90 | Build gap dashboard and reminder prompts | 2026-06-29 → 2026-05-28 (-32d) | 2026-06-30 → 2026-05-29 (-32d) |  |  |  |  |
| 91 | Milestone: Phase 6 complete | 2026-06-30 → 2026-05-29 (-32d) | 2026-06-30 → 2026-05-29 (-32d) |  |  |  |  |
| 92 | **Phase 7: AI/RAG knowledge base** | 2026-06-10 → 2026-05-11 (-30d) | 2026-07-14 → 2026-06-12 (-32d) |  |  |  |  |
| 93 | Create approved source registry and knowledge base structure | 2026-06-10 → 2026-05-11 (-30d) | 2026-06-15 → 2026-05-14 (-32d) |  |  | 84 → none |  |
| 94 | Load GARP M, DVA reform references and internal templates | 2026-06-16 → 2026-05-15 (-32d) | 2026-06-19 → 2026-05-20 (-30d) |  |  |  |  |
| 95 | Build RAG retrieval API | 2026-06-22 → 2026-05-21 (-32d) | 2026-06-26 → 2026-05-27 (-30d) |  |  |  |  |
| 96 | Build prompt templates and safety guardrails | 2026-06-29 → 2026-05-28 (-32d) | 2026-07-02 → 2026-06-02 (-30d) |  |  |  |  |
| 97 | Generate veteran statement and worsening summary drafts | 2026-07-03 → 2026-06-03 (-30d) | 2026-07-08 → 2026-06-08 (-30d) |  |  |  |  |
| 98 | Generate doctor questions, evidence gap summary and doctor letter | 2026-07-09 → 2026-06-09 (-30d) | 2026-07-14 → 2026-06-12 (-32d) |  |  |  |  |
| 99 | Milestone: Phase 7 complete | 2026-07-14 → 2026-06-12 (-32d) | 2026-07-14 → 2026-06-12 (-32d) |  |  |  |  |
| 100 | **Phase 8: Claim Starter Pack document generation** | 2026-07-15 → 2026-06-15 (-30d) | 2026-08-04 → 2026-07-03 (-32d) |  |  |  |  |
| 101 | Design DOCX starter pack templates | 2026-07-15 → 2026-06-15 (-30d) | 2026-07-20 → 2026-06-18 (-32d) |  |  |  |  |
| 102 | Build document generation service | 2026-07-21 → 2026-06-19 (-32d) | 2026-07-24 → 2026-06-24 (-30d) |  |  |  |  |
| 103 | Add PDF conversion and storage versioning | 2026-07-27 → 2026-06-25 (-32d) | 2026-07-29 → 2026-06-29 (-30d) |  |  |  |  |
| 104 | Add document download signed URL flow | 2026-07-30 → 2026-06-30 (-30d) | 2026-07-31 → 2026-07-01 (-30d) |  |  |  |  |
| 105 | Enforce reviewed-only content and test exports | 2026-08-03 → 2026-07-02 (-32d) | 2026-08-04 → 2026-07-03 (-32d) |  |  |  |  |
| 106 | Milestone: Phase 8 complete | 2026-08-04 → 2026-07-03 (-32d) | 2026-08-04 → 2026-07-03 (-32d) |  |  |  |  |
| 107 | **Phase 9: Doctor guidance pack** | 2026-08-05 → 2026-07-06 (-30d) | 2026-08-18 → 2026-07-17 (-32d) |  |  |  |  |
| 108 | Design doctor guidance pack template | 2026-08-05 → 2026-07-06 (-30d) | 2026-08-07 → 2026-07-08 (-30d) |  |  |  |  |
| 109 | Build clinical question generation workflow | 2026-08-10 → 2026-07-09 (-32d) | 2026-08-12 → 2026-07-13 (-30d) |  |  |  |  |
| 110 | Add doctor-specific disclaimer and review checklist | 2026-08-13 → 2026-07-14 (-30d) | 2026-08-14 → 2026-07-15 (-30d) |  |  |  |  |
| 111 | Export and test doctor guidance pack | 2026-08-17 → 2026-07-16 (-32d) | 2026-08-18 → 2026-07-17 (-32d) |  |  |  |  |
| 112 | Milestone: Phase 9 complete | 2026-08-18 → 2026-07-17 (-32d) | 2026-08-18 → 2026-07-17 (-32d) |  |  |  |  |
| 113 | **Phase 10: Admin knowledge and template manager** | 2026-07-15 → 2026-06-15 (-30d) | 2026-08-11 → 2026-07-10 (-32d) |  |  |  |  |
| 114 | Build admin roles and access control | 2026-07-15 → 2026-06-15 (-30d) | 2026-07-17 → 2026-06-17 (-30d) |  |  |  |  |
| 115 | Build source metadata manager | 2026-07-20 → 2026-06-18 (-32d) | 2026-07-23 → 2026-06-23 (-30d) |  |  |  |  |
| 116 | Build question and document template editor | 2026-07-24 → 2026-06-24 (-30d) | 2026-07-30 → 2026-06-30 (-30d) |  |  |  |  |
| 117 | Build prompt and disclaimer versioning | 2026-07-31 → 2026-07-01 (-30d) | 2026-08-05 → 2026-07-06 (-30d) |  |  |  |  |
| 118 | Build knowledge base audit review view | 2026-08-06 → 2026-07-07 (-30d) | 2026-08-11 → 2026-07-10 (-32d) |  |  |  |  |
| 119 | Milestone: Phase 10 complete | 2026-08-11 → 2026-07-10 (-32d) | 2026-08-11 → 2026-07-10 (-32d) |  |  |  |  |
| 120 | **Phase 11: Android and iOS app MVP** | 2026-08-05 → 2026-07-06 (-30d) | 2026-09-29 → 2026-08-28 (-32d) |  |  |  |  |
| 121 | Create MAUI app shell and shared services | 2026-08-05 → 2026-07-06 (-30d) | 2026-08-11 → 2026-07-10 (-32d) |  |  |  |  |
| 122 | Integrate Firebase Authentication | 2026-08-12 → 2026-07-13 (-30d) | 2026-08-18 → 2026-07-17 (-32d) |  |  |  |  |
| 123 | Build dashboard and claim workspace screens | 2026-08-19 → 2026-07-20 (-30d) | 2026-08-26 → 2026-07-27 (-30d) |  |  |  |  |
| 124 | Build condition intake and question engine screens | 2026-08-27 → 2026-07-28 (-30d) | 2026-09-07 → 2026-08-06 (-32d) |  |  |  |  |
| 125 | Build evidence checklist and upload flow | 2026-09-08 → 2026-08-07 (-32d) | 2026-09-16 → 2026-08-17 (-30d) |  |  |  |  |
| 126 | Build AI draft review and document download screens | 2026-09-17 → 2026-08-18 (-30d) | 2026-09-24 → 2026-08-25 (-30d) |  |  |  |  |
| 127 | Complete Android and iOS device testing | 2026-09-25 → 2026-08-26 (-30d) | 2026-09-29 → 2026-08-28 (-32d) |  |  |  |  |
| 128 | Milestone: Phase 11 complete | 2026-09-29 → 2026-08-28 (-32d) | 2026-09-29 → 2026-08-28 (-32d) |  |  |  |  |
| 129 | **Phase 12: Security, privacy and production hardening** | 2026-08-05 → 2026-07-06 (-30d) | 2026-09-15 → 2026-08-14 (-32d) |  |  |  |  |
| 130 | Review RBAC enforcement and audit logging | 2026-08-05 → 2026-07-06 (-30d) | 2026-08-11 → 2026-07-10 (-32d) |  |  |  |  |
| 131 | Build data export and deletion workflows | 2026-08-12 → 2026-07-13 (-30d) | 2026-08-18 → 2026-07-17 (-32d) |  |  |  |  |
| 132 | Create backup and disaster recovery process | 2026-08-19 → 2026-07-20 (-30d) | 2026-08-24 → 2026-07-23 (-32d) |  |  |  |  |
| 133 | Add rate limiting, monitoring and error alerts | 2026-08-25 → 2026-07-24 (-32d) | 2026-08-28 → 2026-07-29 (-30d) |  |  |  |  |
| 134 | Add consent tracking and AI disclosure tracking | 2026-08-31 → 2026-07-30 (-32d) | 2026-09-03 → 2026-08-04 (-30d) |  |  |  |  |
| 135 | Draft privacy policy, terms and support process | 2026-09-04 → 2026-08-05 (-30d) | 2026-09-09 → 2026-08-10 (-30d) |  |  |  |  |
| 136 | Prepare penetration test and remediation buffer | 2026-09-10 → 2026-08-11 (-30d) | 2026-09-15 → 2026-08-14 (-32d) |  |  |  |  |
| 137 | Milestone: Phase 12 complete | 2026-09-15 → 2026-08-14 (-32d) | 2026-09-15 → 2026-08-14 (-32d) |  |  |  |  |
| 138 | **Phase 13: Private pilot** | 2026-09-30 → 2026-08-31 (-30d) | 2026-11-10 → 2026-10-09 (-32d) |  |  |  |  |
| 139 | Recruit and onboard private pilot users | 2026-09-30 → 2026-08-31 (-30d) | 2026-10-06 → 2026-09-04 (-32d) |  |  |  |  |
| 140 | Run support and feedback capture process | 2026-10-07 → 2026-09-07 (-30d) | 2026-10-13 → 2026-09-11 (-32d) |  |  |  |  |
| 141 | Test veteran claim-preparation workflow | 2026-10-14 → 2026-09-14 (-30d) | 2026-10-20 → 2026-09-18 (-32d) |  |  |  |  |
| 142 | Review doctor and advocate pack usefulness | 2026-10-21 → 2026-09-21 (-30d) | 2026-10-27 → 2026-09-25 (-32d) |  |  |  |  |
| 143 | Fix priority issues from pilot | 2026-10-28 → 2026-09-28 (-30d) | 2026-11-04 → 2026-10-05 (-30d) |  |  |  |  |
| 144 | Prepare pilot outcome report and go/no-go decision | 2026-11-05 → 2026-10-06 (-30d) | 2026-11-10 → 2026-10-09 (-32d) |  |  |  |  |
| 145 | Milestone: Phase 13 complete | 2026-11-10 → 2026-10-09 (-32d) | 2026-11-10 → 2026-10-09 (-32d) |  |  |  |  |
| 146 | **Phase 14: Commercial launch preparation** | 2026-11-11 → 2026-10-12 (-30d) | 2026-12-22 → 2026-11-20 (-32d) |  |  |  |  |
| 147 | Decide and implement billing/subscription model | 2026-11-11 → 2026-10-12 (-30d) | 2026-11-17 → 2026-10-16 (-32d) |  |  |  |  |

| ID | Task | Start | Finish |
| --- | --- | --- | --- |
| 148 | Build organisation account model | 2026-11-18 → 2026-10-19 (-30d) | 2026-11-24 → 2026-10-23 (-32d) |
| 149 | Set up support inbox and help centre | 2026-11-25 → 2026-10-26 (-30d) | 2026-12-01 → 2026-10-30 (-32d) |
| 150 | Create marketing site and onboarding content | 2026-12-02 → 2026-11-02 (-30d) | 2026-12-08 → 2026-11-06 (-32d) |
| 151 | Prepare App Store and Play Store materials | 2026-12-09 → 2026-11-09 (-30d) | 2026-12-15 → 2026-11-13 (-32d) |
| 152 | Complete launch readiness and production operations | 2026-12-16 → 2026-11-16 (-30d) | 2026-12-22 → 2026-11-20 (-32d) |
| 153 | Milestone: Phase 14 complete | 2026-12-22 → 2026-11-20 (-32d) | 2026-12-22 → 2026-11-20 (-32d) |

## Version 5 (saved 2026-05-14)

Note of the change: Create Phase 7 AI RAG architecture and safety plan

Last finish 2026-11-20 → 2026-11-16 (-4d). Complete tasks 76 → 104.

Added:

| ID | Task | Duration | Start | Finish | Predecessors | Resources |
| --- | --- | --- | --- | --- | --- | --- |
| 86 | Define Phase 6 scope and evidence safety boundary | 1d | 2026-05-14 | 2026-05-14 | 84 |  |
| 87 | Add workspace tool navigation panel | 1d | 2026-05-14 | 2026-05-14 | 86 |  |
| 88 | Audit existing evidence upload, metadata and gap routes | 1d | 2026-05-14 | 2026-05-14 | 87 |  |
| 89 | Audit backend evidence API and storage flow | 1d | 2026-05-14 | 2026-05-14 | 88 |  |
| 92 | Build evidence category and source tagging | 1d | 2026-05-14 | 2026-05-14 | 91 |  |
| 94 | Build evidence list and detail view improvements | 1d | 2026-05-14 | 2026-05-14 | 93 |  |
| 97 | Connect evidence gaps to GARP M question answers | 1d | 2026-05-14 | 2026-05-14 | 96 |  |
| 98 | Connect evidence gaps to condition intake and accepted history | 1d | 2026-05-14 | 2026-05-14 | 97 | Backend |
| 99 | Add evidence upload validation and error handling | 1d | 2026-05-14 | 2026-05-14 | 98 | Backend |
| 100 | Add evidence download/view action | 1d | 2026-05-14 | 2026-05-14 | 99 | Backend |
| 101 | Add evidence smoke test checklist | 1d | 2026-05-14 | 2026-05-14 | 100 | Backend |
| 102 | Add Phase 6 documentation | 1d | 2026-05-14 | 2026-05-14 | 101 | Backend |
| 104 | **Phase 6.5: Removal and archive controls** | 1d | 2026-05-14 | 2026-05-14 | 103 |  |
| 105 | Build evidence remove/archive button | 1d | 2026-05-14 | 2026-05-14 | 103 |  |
| 106 | Build uploaded file deletion flow | 1d | 2026-05-14 | 2026-05-14 | 105 |  |
| 107 | Build condition archive/remove flow | 1d | 2026-05-14 | 2026-05-14 | 106 |  |
| 108 | Ensure archived evidence is excluded from gaps and AI drafts | 1d | 2026-05-14 | 2026-05-14 | 107 |  |
| 109 | Add removal audit events | 1d | 2026-05-14 | 2026-05-14 | 108 |  |
| 110 | Add removal smoke test checklist | 1d | 2026-05-14 | 2026-05-14 | 109 |  |
| 111 | Milestone: Phase 6.5 complete | 1d | 2026-05-14 | 2026-05-14 | 110 |  |
| 113 | Create AI/RAG architecture and safety plan | 1d | 2026-05-15 | 2026-05-15 | 111 |  |
| 114 | Create approved source registry schema | 1d | 2026-05-18 | 2026-05-18 | 113 |  |
| 116 | Create source category taxonomy | 1d | 2026-05-20 | 2026-05-20 | 115 |  |
| 118 | Create knowledge base seed content files | 1d | 2026-05-22 | 2026-05-22 | 117 |  |
| 119 | Create ingestion and metadata rules | 1d | 2026-05-25 | 2026-05-25 | 118 |  |
| 121 | Build retrieval response with citations/source references | 1d | 2026-05-27 | 2026-05-27 | 120 |  |
| 123 | Build AI draft request API | 1d | 2026-05-29 | 2026-05-29 | 122 | AI / Knowledge |
| 126 | Add AI draft review, copy and save workflow | 1d | 2026-06-03 | 2026-06-03 | 125 | AI / Knowledge |
| 127 | Add AI/RAG audit logging | 1d | 2026-06-04 | 2026-06-04 | 126 | AI / Knowledge |
| 128 | Add AI/RAG smoke test checklist | 1d | 2026-06-05 | 2026-06-05 | 127 | AI / Knowledge |

Changed:

| ID | Task | Start | Finish | Duration | Complete | Predecessors | Other |
| --- | --- | --- | --- | --- | --- | --- | --- |
| 1 | **Phase 1: Product scope and compliance foundation** |  |  | 1d? → 1d |  |  |  |
| 5 | Draft disclaimer and AI-use wording |  |  | 1d? → 1d |  |  |  |
| 6 | Define first user journey |  |  | 1d? → 1d |  |  |  |
| 7 | Define MVP feature list |  |  | 1d? → 1d |  |  |  |
| 8 | Define first data objects |  |  | 1d? → 1d |  |  |  |
| 9 | Define Phase 1 acceptance criteria |  |  | 1d? → 1d |  |  |  |
| 10 | Review Phase 1 pack before build starts |  |  | 1d? → 1d |  |  |  |
| 11 | **Phase 2: Google Cloud foundation** |  | 2026-05-12 → 2026-05-11 (-1d) | 2d? → 1d |  |  |  |
| 12 | Create Google Cloud dev/test/prod project structure |  | 2026-05-12 → 2026-05-11 (-1d) | 2d? → 1d |  |  |  |
| 13 | Enable core Google Cloud services |  |  | 1d? → 1d |  |  |  |
| 14 | Configure IAM, service accounts and Secret Manager |  | 2026-05-12 → 2026-05-11 (-1d) | 2d? → 1d |  |  |  |
| 15 | Create baseline IAM/service account plan |  |  | 1d? → 1d |  |  |  |
| 16 | Create dev service accounts |  |  | 1d? → 1d |  |  |  |
| 17 | Verify dev service accounts |  |  | 1d? → 1d |  |  |  |
| 18 | Create Secret Manager baseline plan |  |  | 1d? → 1d |  |  |  |
| 19 | Create initial placeholder secrets |  |  | 1d? → 1d |  |  |  |
| 20 | Save IAM and Secret Manager setup notes |  |  | 1d? → 1d |  |  |  |
| 21 | Configure Firebase Authentication and App Check |  | 2026-05-12 → 2026-05-11 (-1d) | 2d? → 1d |  |  |  |
| 22 | Create Cloud Run API skeleton and CI/CD |  | 2026-05-12 → 2026-05-11 (-1d) | 2d? → 1d |  |  |  |
| 23 | Provision Cloud SQL PostgreSQL and Cloud Storage buckets |  |  | 1d? → 1d |  |  |  |
| 24 | Connect Cloud Run API to Cloud SQL and Secret Manager |  |  | 1d? → 1d |  |  |  |
| 25 | Milestone: Phase 2 complete |  |  | 0d? → 1d |  |  |  |
| 26 | **Phase 3: Core backend and database** |  | 2026-05-15 → 2026-05-12 (-3d) | 4d? → 1d |  |  |  |
| 27 | Create database schema and migrations |  | 2026-05-14 → 2026-05-12 (-2d) | 3d? → 1d |  |  |  |
| 28 | Implement Firebase token verification and user service |  | 2026-05-14 → 2026-05-12 (-2d) | 3d? → 1d |  |  |  |
| 29 | Build claim workspace API (CRUD) |  | 2026-05-15 → 2026-05-12 (-3d) | 4d? → 1d |  |  |  |
| 30 | Build condition and accepted-condition history APIs |  | 2026-05-15 → 2026-05-12 (-3d) | 4d? → 1d |  |  |  |
| 31 | Build guided question response API |  |  | 1d? → 1d |  |  |  |
| 32 | Build evidence metadata and audit APIs |  | 2026-05-14 → 2026-05-12 (-2d) | 3d? → 1d |  |  |  |
| 33 | Build evidence upload URL API |  |  | 1d? → 1d |  |  |  |
| 34 | Build evidence gap tracker API |  |  | 1d? → 1d |  |  |  |
| 35 | Build AI draft metadata API |  |  | 1d? → 1d |  |  |  |
| 36 | Build generated document metadata API |  |  | 1d? → 1d |  |  |  |
| 37 | Refactor shared auth and ownership helpers |  |  | 1d? → 1d |  |  |  |
| 38 | Create API smoke test script |  |  | 1d? → 1d |  |  |  |
| 39 | Redeploy and verify Phase 3 backend |  |  | 1d? → 1d |  |  |  |
| 40 | Add backend tests and API documentation |  | 2026-05-14 → 2026-05-12 (-2d) | 3d? → 1d |  |  |  |
| 41 | Milestone: Phase 3 complete |  |  | 0d? → 1d |  |  |  |
| 63 | **Phase 5: GARP M-aware question engine** |  | 2026-05-19 → 2026-05-13 (-6d) | 5d → 1d | 86% → 100% |  |  |
| 81 | Add workspace detail links to question engine | 2026-05-14 → 2026-05-13 (-1d) | 2026-05-14 → 2026-05-13 (-1d) |  |  |  |  |
| 82 | Add backend/frontend smoke test checklist updates | 2026-05-15 → 2026-05-13 (-2d) | 2026-05-15 → 2026-05-13 (-2d) |  | 0% → 100% |  |  |
| 83 | Add Phase 5 documentation | 2026-05-18 → 2026-05-13 (-5d) | 2026-05-18 → 2026-05-13 (-5d) |  | 0% → 100% |  |  |
| 84 | Milestone: Phase 5 complete | 2026-05-19 → 2026-05-13 (-6d) | 2026-05-19 → 2026-05-13 (-6d) |  | 0% → 100% |  |  |
| 85 | **Phase 6: Evidence upload and gap tracker** | 2026-05-11 → 2026-05-14 (+3d) | 2026-05-29 → 2026-05-14 (-15d) | 15d? → 1d? | 0% → 100% | none → 84 |  |
| 90 | Build signed upload and download URL flow | 2026-05-11 → 2026-05-14 (+3d) | 2026-05-13 → 2026-05-14 (+1d) | 3d? → 1d | 0% → 100% | none → 89 | resources Backend → none; baseline start 2026-09-03 → none; baseline finish 2026-09-07 → none |
| 91 | Build evidence item tagging and condition linking |  | 2026-05-18 → 2026-05-14 (-4d) | 3d? → 1d | 0% → 100% |  | resources Backend → none; baseline start 2026-09-08 → none; baseline finish 2026-09-10 → none |
| 93 | Build evidence status workflow | 2026-05-19 → 2026-05-14 (-5d) | 2026-05-21 → 2026-05-14 (-7d) | 3d? → 1d | 0% → 100% | 91 → 92 | resources Backend → none; baseline start 2026-09-11 → none; baseline finish 2026-09-15 → none |
| 95 | Build evidence gap rules engine | 2026-05-22 → 2026-05-14 (-8d) | 2026-05-27 → 2026-05-14 (-13d) | 4d? → 1d | 0% → 100% | 93 → 94 | resources Backend → none; baseline start 2026-09-16 → none; baseline finish 2026-09-21 → none |
| 96 | Build gap dashboard and reminder prompts | 2026-05-28 → 2026-05-14 (-14d) | 2026-05-29 → 2026-05-14 (-15d) | 2d? → 1d? | 0% → 100% |  | resources Backend → none; baseline start 2026-09-22 → none; baseline finish 2026-09-23 → none |
| 103 | Milestone: Phase 6 complete | 2026-05-29 → 2026-05-14 (-15d) | 2026-05-29 → 2026-05-14 (-15d) | 0d? → 1d | 0% → 100% | 96 → 102 |  |
| 112 | **Phase 7: AI/RAG knowledge base** | 2026-05-11 → 2026-05-15 (+4d) | 2026-06-12 → 2026-06-08 (-4d) | 25d? → 17d |  | none → 111 |  |
| 115 | Create approved source registry and knowledge base structure | 2026-05-11 → 2026-05-19 (+8d) | 2026-05-14 → 2026-05-19 (+5d) | 4d? → 1d |  | none → 114 | resources AI / Knowledge → none; baseline start 2026-09-03 → none; baseline finish 2026-09-08 → none |
| 117 | Load GARP M, DVA reform references and internal templates | 2026-05-15 → 2026-05-21 (+6d) | 2026-05-20 → 2026-05-21 (+1d) | 4d? → 1d |  | 115 → 116 | resources AI / Knowledge → none; baseline start 2026-09-09 → none; baseline finish 2026-09-14 → none |
| 120 | Build RAG retrieval API | 2026-05-21 → 2026-05-26 (+5d) | 2026-05-27 → 2026-05-26 (-1d) | 5d? → 1d |  | 117 → 119 | resources AI / Knowledge → none; baseline start 2026-09-15 → none; baseline finish 2026-09-21 → none |
| 122 | Build prompt templates and safety guardrails |  | 2026-06-02 → 2026-05-28 (-5d) | 4d? → 1d |  | 120 → 121 | resources AI / Knowledge → none; baseline start 2026-09-22 → none; baseline finish 2026-09-25 → none |
| 124 | Generate veteran statement and worsening summary drafts | 2026-06-03 → 2026-06-01 (-2d) | 2026-06-08 → 2026-06-01 (-7d) | 4d? → 1d |  | 122 → 123 | baseline start 2026-09-28 → 2026-09-09; baseline finish 2026-10-01 → 2026-09-14 |
| 125 | Generate doctor questions, evidence gap summary and doctor letter | 2026-06-09 → 2026-06-02 (-7d) | 2026-06-12 → 2026-06-02 (-10d) | 4d? → 1d |  |  | baseline start 2026-10-02 → 2026-09-15; baseline finish 2026-10-07 → 2026-09-21 |
| 129 | Milestone: Phase 7 complete | 2026-06-12 → 2026-06-08 (-4d) | 2026-06-12 → 2026-06-08 (-4d) | 0d? → 1d |  | 125 → 128 |  |
| 130 | **Phase 8: Claim Starter Pack document generation** | 2026-06-15 → 2026-06-09 (-6d) | 2026-07-03 → 2026-06-29 (-4d) |  |  |  |  |
| 131 | Design DOCX starter pack templates | 2026-06-15 → 2026-06-09 (-6d) | 2026-06-18 → 2026-06-12 (-6d) |  |  |  |  |
| 132 | Build document generation service | 2026-06-19 → 2026-06-15 (-4d) | 2026-06-24 → 2026-06-18 (-6d) |  |  |  |  |
| 133 | Add PDF conversion and storage versioning | 2026-06-25 → 2026-06-19 (-6d) | 2026-06-29 → 2026-06-23 (-6d) |  |  |  |  |
| 134 | Add document download signed URL flow | 2026-06-30 → 2026-06-24 (-6d) | 2026-07-01 → 2026-06-25 (-6d) |  |  |  |  |
| 135 | Enforce reviewed-only content and test exports | 2026-07-02 → 2026-06-26 (-6d) | 2026-07-03 → 2026-06-29 (-4d) |  |  |  |  |
| 136 | Milestone: Phase 8 complete | 2026-07-03 → 2026-06-29 (-4d) | 2026-07-03 → 2026-06-29 (-4d) |  |  |  |  |
| 137 | **Phase 9: Doctor guidance pack** | 2026-07-06 → 2026-06-30 (-6d) | 2026-07-17 → 2026-07-13 (-4d) |  |  |  |  |
| 138 | Design doctor guidance pack template | 2026-07-06 → 2026-06-30 (-6d) | 2026-07-08 → 2026-07-02 (-6d) |  |  |  |  |
| 139 | Build clinical question generation workflow | 2026-07-09 → 2026-07-03 (-6d) | 2026-07-13 → 2026-07-07 (-6d) |  |  |  |  |
| 140 | Add doctor-specific disclaimer and review checklist | 2026-07-14 → 2026-07-08 (-6d) | 2026-07-15 → 2026-07-09 (-6d) |  |  |  |  |
| 141 | Export and test doctor guidance pack | 2026-07-16 → 2026-07-10 (-6d) | 2026-07-17 → 2026-07-13 (-4d) |  |  |  |  |

| ID | Task | Start | Finish |
| --- | --- | --- | --- |
| 142 | Milestone: Phase 9 complete | 2026-07-17 → 2026-07-13 (-4d) | 2026-07-17 → 2026-07-13 (-4d) |
| 143 | **Phase 10: Admin knowledge and template manager** | 2026-06-15 → 2026-06-09 (-6d) | 2026-07-10 → 2026-07-06 (-4d) |
| 144 | Build admin roles and access control | 2026-06-15 → 2026-06-09 (-6d) | 2026-06-17 → 2026-06-11 (-6d) |
| 145 | Build source metadata manager | 2026-06-18 → 2026-06-12 (-6d) | 2026-06-23 → 2026-06-17 (-6d) |
| 146 | Build question and document template editor | 2026-06-24 → 2026-06-18 (-6d) | 2026-06-30 → 2026-06-24 (-6d) |
| 147 | Build prompt and disclaimer versioning | 2026-07-01 → 2026-06-25 (-6d) | 2026-07-06 → 2026-06-30 (-6d) |
| 148 | Build knowledge base audit review view | 2026-07-07 → 2026-07-01 (-6d) | 2026-07-10 → 2026-07-06 (-4d) |
| 149 | Milestone: Phase 10 complete | 2026-07-10 → 2026-07-06 (-4d) | 2026-07-10 → 2026-07-06 (-4d) |
| 150 | **Phase 11: Android and iOS app MVP** | 2026-07-06 → 2026-06-30 (-6d) | 2026-08-28 → 2026-08-24 (-4d) |
| 151 | Create MAUI app shell and shared services | 2026-07-06 → 2026-06-30 (-6d) | 2026-07-10 → 2026-07-06 (-4d) |
| 152 | Integrate Firebase Authentication | 2026-07-13 → 2026-07-07 (-6d) | 2026-07-17 → 2026-07-13 (-4d) |
| 153 | Build dashboard and claim workspace screens | 2026-07-20 → 2026-07-14 (-6d) | 2026-07-27 → 2026-07-21 (-6d) |
| 154 | Build condition intake and question engine screens | 2026-07-28 → 2026-07-22 (-6d) | 2026-08-06 → 2026-07-31 (-6d) |
| 155 | Build evidence checklist and upload flow | 2026-08-07 → 2026-08-03 (-4d) | 2026-08-17 → 2026-08-11 (-6d) |
| 156 | Build AI draft review and document download screens | 2026-08-18 → 2026-08-12 (-6d) | 2026-08-25 → 2026-08-19 (-6d) |
| 157 | Complete Android and iOS device testing | 2026-08-26 → 2026-08-20 (-6d) | 2026-08-28 → 2026-08-24 (-4d) |
| 158 | Milestone: Phase 11 complete | 2026-08-28 → 2026-08-24 (-4d) | 2026-08-28 → 2026-08-24 (-4d) |
| 159 | **Phase 12: Security, privacy and production hardening** | 2026-07-06 → 2026-06-30 (-6d) | 2026-08-14 → 2026-08-10 (-4d) |
| 160 | Review RBAC enforcement and audit logging | 2026-07-06 → 2026-06-30 (-6d) | 2026-07-10 → 2026-07-06 (-4d) |
| 161 | Build data export and deletion workflows | 2026-07-13 → 2026-07-07 (-6d) | 2026-07-17 → 2026-07-13 (-4d) |
| 162 | Create backup and disaster recovery process | 2026-07-20 → 2026-07-14 (-6d) | 2026-07-23 → 2026-07-17 (-6d) |
| 163 | Add rate limiting, monitoring and error alerts | 2026-07-24 → 2026-07-20 (-4d) | 2026-07-29 → 2026-07-23 (-6d) |
| 164 | Add consent tracking and AI disclosure tracking | 2026-07-30 → 2026-07-24 (-6d) | 2026-08-04 → 2026-07-29 (-6d) |
| 165 | Draft privacy policy, terms and support process | 2026-08-05 → 2026-07-30 (-6d) | 2026-08-10 → 2026-08-04 (-6d) |
| 166 | Prepare penetration test and remediation buffer | 2026-08-11 → 2026-08-05 (-6d) | 2026-08-14 → 2026-08-10 (-4d) |
| 167 | Milestone: Phase 12 complete | 2026-08-14 → 2026-08-10 (-4d) | 2026-08-14 → 2026-08-10 (-4d) |
| 168 | **Phase 13: Private pilot** | 2026-08-31 → 2026-08-25 (-6d) | 2026-10-09 → 2026-10-05 (-4d) |
| 169 | Recruit and onboard private pilot users | 2026-08-31 → 2026-08-25 (-6d) | 2026-09-04 → 2026-08-31 (-4d) |
| 170 | Run support and feedback capture process | 2026-09-07 → 2026-09-01 (-6d) | 2026-09-11 → 2026-09-07 (-4d) |
| 171 | Test veteran claim-preparation workflow | 2026-09-14 → 2026-09-08 (-6d) | 2026-09-18 → 2026-09-14 (-4d) |
| 172 | Review doctor and advocate pack usefulness | 2026-09-21 → 2026-09-15 (-6d) | 2026-09-25 → 2026-09-21 (-4d) |
| 173 | Fix priority issues from pilot | 2026-09-28 → 2026-09-22 (-6d) | 2026-10-05 → 2026-09-29 (-6d) |
| 174 | Prepare pilot outcome report and go/no-go decision | 2026-10-06 → 2026-09-30 (-6d) | 2026-10-09 → 2026-10-05 (-4d) |
| 175 | Milestone: Phase 13 complete | 2026-10-09 → 2026-10-05 (-4d) | 2026-10-09 → 2026-10-05 (-4d) |
| 176 | **Phase 14: Commercial launch preparation** | 2026-10-12 → 2026-10-06 (-6d) | 2026-11-20 → 2026-11-16 (-4d) |
| 177 | Decide and implement billing/subscription model | 2026-10-12 → 2026-10-06 (-6d) | 2026-10-16 → 2026-10-12 (-4d) |
| 178 | Build organisation account model | 2026-10-19 → 2026-10-13 (-6d) | 2026-10-23 → 2026-10-19 (-4d) |
| 179 | Set up support inbox and help centre | 2026-10-26 → 2026-10-20 (-6d) | 2026-10-30 → 2026-10-26 (-4d) |
| 180 | Create marketing site and onboarding content | 2026-11-02 → 2026-10-27 (-6d) | 2026-11-06 → 2026-11-02 (-4d) |
| 181 | Prepare App Store and Play Store materials | 2026-11-09 → 2026-11-03 (-6d) | 2026-11-13 → 2026-11-09 (-4d) |
| 182 | Complete launch readiness and production operations | 2026-11-16 → 2026-11-10 (-6d) | 2026-11-20 → 2026-11-16 (-4d) |
| 183 | Milestone: Phase 14 complete | 2026-11-20 → 2026-11-16 (-4d) | 2026-11-20 → 2026-11-16 (-4d) |

## Version 6 (saved 2026-05-15)

Note of the change: Design doctor guidance pack template

Last finish 2026-11-16 → 2026-10-02 (-45d). Complete tasks 104 → 127.

Changed:

| ID | Task | Start | Finish | Duration | Complete | Other |
| --- | --- | --- | --- | --- | --- | --- |
| 112 | **Phase 7: AI/RAG knowledge base** |  | 2026-06-08 → 2026-05-15 (-24d) | 17d → 1d | 0% → 100% |  |
| 113 | Create AI/RAG architecture and safety plan |  |  |  | 0% → 100% | resources none → AI / Knowledge |
| 114 | Create approved source registry schema | 2026-05-18 → 2026-05-15 (-3d) | 2026-05-18 → 2026-05-15 (-3d) |  | 0% → 100% | resources none → AI / Knowledge |
| 115 | Create approved source registry and knowledge base structure | 2026-05-19 → 2026-05-15 (-4d) | 2026-05-19 → 2026-05-15 (-4d) |  | 0% → 100% | resources none → AI / Knowledge |
| 116 | Create source category taxonomy | 2026-05-20 → 2026-05-15 (-5d) | 2026-05-20 → 2026-05-15 (-5d) |  | 0% → 100% | resources none → AI / Knowledge |
| 117 | Load GARP M, DVA reform references and internal templates | 2026-05-21 → 2026-05-15 (-6d) | 2026-05-21 → 2026-05-15 (-6d) |  | 0% → 100% | resources none → AI / Knowledge |
| 118 | Create knowledge base seed content files | 2026-05-22 → 2026-05-15 (-7d) | 2026-05-22 → 2026-05-15 (-7d) |  | 0% → 100% | resources none → AI / Knowledge |
| 119 | Create ingestion and metadata rules | 2026-05-25 → 2026-05-15 (-10d) | 2026-05-25 → 2026-05-15 (-10d) |  | 0% → 100% | resources none → AI / Knowledge |
| 120 | Build RAG retrieval API | 2026-05-26 → 2026-05-15 (-11d) | 2026-05-26 → 2026-05-15 (-11d) |  | 0% → 100% | resources none → AI / Knowledge |
| 121 | Build retrieval response with citations/source references | 2026-05-27 → 2026-05-15 (-12d) | 2026-05-27 → 2026-05-15 (-12d) |  | 0% → 100% | resources none → AI / Knowledge |
| 122 | Build prompt templates and safety guardrails | 2026-05-28 → 2026-05-15 (-13d) | 2026-05-28 → 2026-05-15 (-13d) |  | 0% → 100% | resources none → AI / Knowledge |
| 123 | Build AI draft request API | 2026-05-29 → 2026-05-15 (-14d) | 2026-05-29 → 2026-05-15 (-14d) |  | 0% → 100% |  |
| 124 | Generate veteran statement and worsening summary drafts | 2026-06-01 → 2026-05-15 (-17d) | 2026-06-01 → 2026-05-15 (-17d) |  | 0% → 100% |  |
| 125 | Generate doctor questions, evidence gap summary and doctor letter | 2026-06-02 → 2026-05-15 (-18d) | 2026-06-02 → 2026-05-15 (-18d) |  | 0% → 100% |  |
| 126 | Add AI draft review, copy and save workflow | 2026-06-03 → 2026-05-15 (-19d) | 2026-06-03 → 2026-05-15 (-19d) |  | 0% → 100% |  |
| 127 | Add AI/RAG audit logging | 2026-06-04 → 2026-05-15 (-20d) | 2026-06-04 → 2026-05-15 (-20d) |  | 0% → 100% |  |
| 128 | Add AI/RAG smoke test checklist | 2026-06-05 → 2026-05-15 (-21d) | 2026-06-05 → 2026-05-15 (-21d) |  | 0% → 100% |  |
| 129 | Milestone: Phase 7 complete | 2026-06-08 → 2026-05-15 (-24d) | 2026-06-08 → 2026-05-15 (-24d) |  | 0% → 100% |  |
| 130 | **Phase 8: Claim Starter Pack document generation** | 2026-06-09 → 2026-05-15 (-25d) | 2026-06-29 → 2026-05-15 (-45d) | 15d? → 1d | 0% → 100% |  |
| 131 | Design DOCX starter pack templates | 2026-06-09 → 2026-05-15 (-25d) | 2026-06-12 → 2026-05-15 (-28d) | 4d? → 1d | 0% → 100% |  |
| 132 | Build document generation service | 2026-06-15 → 2026-05-15 (-31d) | 2026-06-18 → 2026-05-15 (-34d) | 4d? → 1d | 0% → 100% |  |
| 133 | Add PDF conversion and storage versioning | 2026-06-19 → 2026-05-15 (-35d) | 2026-06-23 → 2026-05-15 (-39d) | 3d? → 1d | 0% → 100% |  |
| 134 | Add document download signed URL flow | 2026-06-24 → 2026-05-15 (-40d) | 2026-06-25 → 2026-05-15 (-41d) | 2d? → 1d | 0% → 100% |  |
| 135 | Enforce reviewed-only content and test exports | 2026-06-26 → 2026-05-15 (-42d) | 2026-06-29 → 2026-05-15 (-45d) | 2d? → 1d | 0% → 100% |  |
| 136 | Milestone: Phase 8 complete | 2026-06-29 → 2026-05-15 (-45d) | 2026-06-29 → 2026-05-15 (-45d) | 0d? → 1d | 0% → 100% |  |
| 137 | **Phase 9: Doctor guidance pack** | 2026-06-30 → 2026-05-18 (-43d) | 2026-07-13 → 2026-05-29 (-45d) |  |  |  |
| 138 | Design doctor guidance pack template | 2026-06-30 → 2026-05-18 (-43d) | 2026-07-02 → 2026-05-20 (-43d) |  |  |  |
| 139 | Build clinical question generation workflow | 2026-07-03 → 2026-05-21 (-43d) | 2026-07-07 → 2026-05-25 (-43d) |  |  |  |
| 140 | Add doctor-specific disclaimer and review checklist | 2026-07-08 → 2026-05-26 (-43d) | 2026-07-09 → 2026-05-27 (-43d) |  |  |  |
| 141 | Export and test doctor guidance pack | 2026-07-10 → 2026-05-28 (-43d) | 2026-07-13 → 2026-05-29 (-45d) |  |  |  |
| 142 | Milestone: Phase 9 complete | 2026-07-13 → 2026-05-29 (-45d) | 2026-07-13 → 2026-05-29 (-45d) |  |  |  |
| 143 | **Phase 10: Admin knowledge and template manager** | 2026-06-09 → 2026-05-18 (-22d) | 2026-07-06 → 2026-06-12 (-24d) |  |  |  |
| 144 | Build admin roles and access control | 2026-06-09 → 2026-05-18 (-22d) | 2026-06-11 → 2026-05-20 (-22d) |  |  |  |
| 145 | Build source metadata manager | 2026-06-12 → 2026-05-21 (-22d) | 2026-06-17 → 2026-05-26 (-22d) |  |  |  |
| 146 | Build question and document template editor | 2026-06-18 → 2026-05-27 (-22d) | 2026-06-24 → 2026-06-02 (-22d) |  |  |  |
| 147 | Build prompt and disclaimer versioning | 2026-06-25 → 2026-06-03 (-22d) | 2026-06-30 → 2026-06-08 (-22d) |  |  |  |
| 148 | Build knowledge base audit review view | 2026-07-01 → 2026-06-09 (-22d) | 2026-07-06 → 2026-06-12 (-24d) |  |  |  |
| 149 | Milestone: Phase 10 complete | 2026-07-06 → 2026-06-12 (-24d) | 2026-07-06 → 2026-06-12 (-24d) |  |  |  |
| 150 | **Phase 11: Android and iOS app MVP** | 2026-06-30 → 2026-05-18 (-43d) | 2026-08-24 → 2026-07-10 (-45d) |  |  |  |
| 151 | Create MAUI app shell and shared services | 2026-06-30 → 2026-05-18 (-43d) | 2026-07-06 → 2026-05-22 (-45d) |  |  |  |
| 152 | Integrate Firebase Authentication | 2026-07-07 → 2026-05-25 (-43d) | 2026-07-13 → 2026-05-29 (-45d) |  |  |  |
| 153 | Build dashboard and claim workspace screens | 2026-07-14 → 2026-06-01 (-43d) | 2026-07-21 → 2026-06-08 (-43d) |  |  |  |
| 154 | Build condition intake and question engine screens | 2026-07-22 → 2026-06-09 (-43d) | 2026-07-31 → 2026-06-18 (-43d) |  |  |  |
| 155 | Build evidence checklist and upload flow | 2026-08-03 → 2026-06-19 (-45d) | 2026-08-11 → 2026-06-29 (-43d) |  |  |  |
| 156 | Build AI draft review and document download screens | 2026-08-12 → 2026-06-30 (-43d) | 2026-08-19 → 2026-07-07 (-43d) |  |  |  |
| 157 | Complete Android and iOS device testing | 2026-08-20 → 2026-07-08 (-43d) | 2026-08-24 → 2026-07-10 (-45d) |  |  |  |
| 158 | Milestone: Phase 11 complete | 2026-08-24 → 2026-07-10 (-45d) | 2026-08-24 → 2026-07-10 (-45d) |  |  |  |
| 159 | **Phase 12: Security, privacy and production hardening** | 2026-06-30 → 2026-05-18 (-43d) | 2026-08-10 → 2026-06-26 (-45d) |  |  |  |
| 160 | Review RBAC enforcement and audit logging | 2026-06-30 → 2026-05-18 (-43d) | 2026-07-06 → 2026-05-22 (-45d) |  |  |  |
| 161 | Build data export and deletion workflows | 2026-07-07 → 2026-05-25 (-43d) | 2026-07-13 → 2026-05-29 (-45d) |  |  |  |
| 162 | Create backup and disaster recovery process | 2026-07-14 → 2026-06-01 (-43d) | 2026-07-17 → 2026-06-04 (-43d) |  |  |  |
| 163 | Add rate limiting, monitoring and error alerts | 2026-07-20 → 2026-06-05 (-45d) | 2026-07-23 → 2026-06-10 (-43d) |  |  |  |
| 164 | Add consent tracking and AI disclosure tracking | 2026-07-24 → 2026-06-11 (-43d) | 2026-07-29 → 2026-06-16 (-43d) |  |  |  |
| 165 | Draft privacy policy, terms and support process | 2026-07-30 → 2026-06-17 (-43d) | 2026-08-04 → 2026-06-22 (-43d) |  |  |  |
| 166 | Prepare penetration test and remediation buffer | 2026-08-05 → 2026-06-23 (-43d) | 2026-08-10 → 2026-06-26 (-45d) |  |  |  |
| 167 | Milestone: Phase 12 complete | 2026-08-10 → 2026-06-26 (-45d) | 2026-08-10 → 2026-06-26 (-45d) |  |  |  |
| 168 | **Phase 13: Private pilot** | 2026-08-25 → 2026-07-13 (-43d) | 2026-10-05 → 2026-08-21 (-45d) |  |  |  |
| 169 | Recruit and onboard private pilot users | 2026-08-25 → 2026-07-13 (-43d) | 2026-08-31 → 2026-07-17 (-45d) |  |  |  |
| 170 | Run support and feedback capture process | 2026-09-01 → 2026-07-20 (-43d) | 2026-09-07 → 2026-07-24 (-45d) |  |  |  |
| 171 | Test veteran claim-preparation workflow | 2026-09-08 → 2026-07-27 (-43d) | 2026-09-14 → 2026-07-31 (-45d) |  |  |  |
| 172 | Review doctor and advocate pack usefulness | 2026-09-15 → 2026-08-03 (-43d) | 2026-09-21 → 2026-08-07 (-45d) |  |  |  |
| 173 | Fix priority issues from pilot | 2026-09-22 → 2026-08-10 (-43d) | 2026-09-29 → 2026-08-17 (-43d) |  |  |  |
| 174 | Prepare pilot outcome report and go/no-go decision | 2026-09-30 → 2026-08-18 (-43d) | 2026-10-05 → 2026-08-21 (-45d) |  |  |  |
| 175 | Milestone: Phase 13 complete | 2026-10-05 → 2026-08-21 (-45d) | 2026-10-05 → 2026-08-21 (-45d) |  |  |  |
| 176 | **Phase 14: Commercial launch preparation** | 2026-10-06 → 2026-08-24 (-43d) | 2026-11-16 → 2026-10-02 (-45d) |  |  |  |
| 177 | Decide and implement billing/subscription model | 2026-10-06 → 2026-08-24 (-43d) | 2026-10-12 → 2026-08-28 (-45d) |  |  |  |
| 178 | Build organisation account model | 2026-10-13 → 2026-08-31 (-43d) | 2026-10-19 → 2026-09-04 (-45d) |  |  |  |
| 179 | Set up support inbox and help centre | 2026-10-20 → 2026-09-07 (-43d) | 2026-10-26 → 2026-09-11 (-45d) |  |  |  |
| 180 | Create marketing site and onboarding content | 2026-10-27 → 2026-09-14 (-43d) | 2026-11-02 → 2026-09-18 (-45d) |  |  |  |
| 181 | Prepare App Store and Play Store materials | 2026-11-03 → 2026-09-21 (-43d) | 2026-11-09 → 2026-09-25 (-45d) |  |  |  |

| ID | Task | Start | Finish |
| --- | --- | --- | --- |
| 182 | Complete launch readiness and production operations | 2026-11-10 → 2026-09-28 (-43d) | 2026-11-16 → 2026-10-02 (-45d) |
| 183 | Milestone: Phase 14 complete | 2026-11-16 → 2026-10-02 (-45d) | 2026-11-16 → 2026-10-02 (-45d) |

## Version 7 (saved 2026-05-15)

Note of the change: Add admin database migration maintenance endpoint

Last finish stays 2026-10-02. Complete tasks 127 → 135.

Added:

| ID | Task | Duration | Start | Finish | Predecessors | Resources |
| --- | --- | --- | --- | --- | --- | --- |
| 145 | Build admin dashboard shell and navigation | 1d | 2026-05-15 | 2026-05-15 | 144 | Backend |
| 150 | Add admin audit logging | 1d | 2026-05-22 | 2026-05-22 | 149 | Backend |
| 151 | Add admin smoke test checklist | 1d | 2026-05-25 | 2026-05-25 | 150 | Backend |

Changed:

| ID | Task | Start | Finish | Duration | Complete | Predecessors | Other |
| --- | --- | --- | --- | --- | --- | --- | --- |
| 137 | **Phase 9: Doctor guidance pack** | 2026-05-18 → 2026-05-15 (-3d) | 2026-05-29 → 2026-05-15 (-14d) | 10d? → 1d | 0% → 100% |  |  |
| 138 | Design doctor guidance pack template | 2026-05-18 → 2026-05-15 (-3d) | 2026-05-20 → 2026-05-15 (-5d) | 3d? → 1d | 0% → 100% |  |  |
| 139 | Build clinical question generation workflow | 2026-05-21 → 2026-05-15 (-6d) | 2026-05-25 → 2026-05-15 (-10d) | 3d? → 1d | 0% → 100% |  |  |
| 140 | Add doctor-specific disclaimer and review checklist | 2026-05-26 → 2026-05-15 (-11d) | 2026-05-27 → 2026-05-15 (-12d) | 2d? → 1d | 0% → 100% |  |  |
| 141 | Export and test doctor guidance pack | 2026-05-28 → 2026-05-15 (-13d) | 2026-05-29 → 2026-05-15 (-14d) | 2d? → 1d | 0% → 100% |  |  |
| 142 | Milestone: Phase 9 complete | 2026-05-29 → 2026-05-15 (-14d) | 2026-05-29 → 2026-05-15 (-14d) | 0d? → 1d | 0% → 100% |  |  |
| 143 | **Phase 10: Admin knowledge and template manager** | 2026-05-18 → 2026-05-15 (-3d) | 2026-06-12 → 2026-05-25 (-18d) | 20d? → 7d? | 0% → 38% | none → 142 |  |
| 144 | Build admin roles and access control | 2026-05-18 → 2026-05-15 (-3d) | 2026-05-20 → 2026-05-15 (-5d) | 3d? → 1d | 0% → 100% | 129 → 142 | baseline start 2026-10-08 → none; baseline finish 2026-10-12 → none |
| 146 | Build source metadata manager | 2026-05-21 → 2026-05-18 (-3d) | 2026-05-26 → 2026-05-18 (-8d) | 4d? → 1d | 0% → 100% | 144 → 145 | baseline start 2026-10-13 → none; baseline finish 2026-10-16 → none |
| 147 | Build question and document template editor | 2026-05-27 → 2026-05-19 (-8d) | 2026-06-02 → 2026-05-19 (-14d) | 5d? → 1d |  |  | baseline start 2026-10-19 → none; baseline finish 2026-10-23 → none |
| 148 | Build prompt and disclaimer versioning | 2026-06-03 → 2026-05-20 (-14d) | 2026-06-08 → 2026-05-20 (-19d) | 4d? → 1d |  |  | baseline start 2026-10-26 → 2026-10-08; baseline finish 2026-10-29 → 2026-10-12 |
| 149 | Build knowledge base audit review view | 2026-06-09 → 2026-05-21 (-19d) | 2026-06-12 → 2026-05-21 (-22d) | 4d? → 1d |  |  | baseline start 2026-10-30 → 2026-10-13; baseline finish 2026-11-04 → 2026-10-16 |
| 152 | Milestone: Phase 10 complete | 2026-06-12 → 2026-05-15 (-28d) | 2026-06-12 → 2026-05-15 (-28d) |  |  | 149 → none |  |

## Version 8 (saved 2026-05-22)

Note of the change: Build authenticated API client and token flow

Last finish 2026-10-02 → 2026-09-18 (-14d). Complete tasks 135 → 144.

Added:

| ID | Task | Duration | Start | Finish | Predecessors | Resources |
| --- | --- | --- | --- | --- | --- | --- |
| 155 | Configure mobile API environment settings | 0d | 2026-05-18 | 2026-05-18 | 154 | Mobile |
| 157 | Build authenticated API client and token flow | 0d | 2026-05-18 | 2026-05-18 | 156 | Mobile |
| 162 | Add mobile loading, error and empty states | 0d | 2026-05-18 | 2026-05-18 | 161 | Mobile |
| 163 | Add Android app icon, name and basic release config | 0d | 2026-05-18 | 2026-05-18 | 162 | Mobile |
| 164 | Add iOS app icon, name and basic release config | 0d | 2026-05-18 | 2026-05-18 | 163 | Mobile |
| 165 | Complete Android device testing | 0d | 2026-05-18 | 2026-05-18 | 164 | Mobile |
| 166 | Complete iOS device testing | 0d | 2026-05-18 | 2026-05-18 | 165 | Mobile |
| 167 | Add Phase 11 mobile smoke test checklist | 0d | 2026-05-18 | 2026-05-18 | 166 | Mobile |

Removed: 160 Complete Android and iOS device testing

Changed:

| ID | Task | Start | Finish | Duration | Complete | Predecessors | Other |
| --- | --- | --- | --- | --- | --- | --- | --- |
| 143 | **Phase 10: Admin knowledge and template manager** |  | 2026-05-25 → 2026-05-18 (-7d) | 7d? → 2d? | 38% → 100% |  |  |
| 146 | Build source metadata manager | 2026-05-18 → 2026-05-15 (-3d) |  | 1d → 2d |  |  |  |
| 147 | Build question and document template editor | 2026-05-19 → 2026-05-18 (-1d) | 2026-05-19 → 2026-05-18 (-1d) |  | 0% → 100% |  |  |
| 148 | Build prompt and disclaimer versioning | 2026-05-20 → 2026-05-18 (-2d) | 2026-05-20 → 2026-05-18 (-2d) |  | 0% → 100% |  |  |
| 149 | Build knowledge base audit review view | 2026-05-21 → 2026-05-18 (-3d) | 2026-05-21 → 2026-05-18 (-3d) |  | 0% → 100% |  |  |
| 150 | Add admin audit logging | 2026-05-22 → 2026-05-18 (-4d) | 2026-05-22 → 2026-05-18 (-4d) |  | 0% → 100% |  |  |
| 151 | Add admin smoke test checklist | 2026-05-25 → 2026-05-18 (-7d) | 2026-05-25 → 2026-05-18 (-7d) |  | 0% → 100% |  |  |
| 152 | Milestone: Phase 10 complete | 2026-05-15 → 2026-05-18 (+3d) | 2026-05-15 → 2026-05-18 (+3d) |  | 0% → 100% | none → 151 |  |
| 153 | **Phase 11: Android and iOS app MVP** |  | 2026-07-10 → 2026-05-18 (-53d) | 40d? → 0d? |  | none → 152 |  |
| 154 | Create MAUI app shell and shared services |  | 2026-05-22 → 2026-05-18 (-4d) | 5d? → 0d | 0% → 100% | 136 → 152 | baseline start 2026-10-29 → none; baseline finish 2026-11-04 → none |
| 156 | Integrate Firebase Authentication | 2026-05-25 → 2026-05-18 (-7d) | 2026-05-29 → 2026-05-18 (-11d) | 5d? → 0d | 0% → 100% | 154 → 155 | baseline start 2026-11-05 → none; baseline finish 2026-11-11 → none |
| 158 | Build dashboard and claim workspace screens | 2026-06-01 → 2026-05-18 (-14d) | 2026-06-08 → 2026-05-18 (-21d) | 6d? → 0d |  | 156 → 157 | baseline start 2026-11-12 → none; baseline finish 2026-11-19 → none |
| 159 | Build condition intake and question engine screens | 2026-06-09 → 2026-05-18 (-22d) | 2026-06-18 → 2026-05-18 (-31d) | 8d? → 0d |  |  | baseline start 2026-11-20 → none; baseline finish 2026-12-01 → none |
| 160 | Build evidence checklist and upload flow | 2026-06-19 → 2026-05-18 (-32d) | 2026-06-29 → 2026-05-18 (-42d) | 7d? → 0d |  |  | baseline start 2026-12-02 → none; baseline finish 2026-12-10 → none |
| 161 | Build AI draft review and document download screens | 2026-06-30 → 2026-05-18 (-43d) | 2026-07-07 → 2026-05-18 (-50d) | 6d? → 0d |  |  | baseline start 2026-12-11 → 2026-10-29; baseline finish 2026-12-18 → 2026-11-04 |
| 168 | Milestone: Phase 11 complete | 2026-07-10 → 2026-05-18 (-53d) | 2026-07-10 → 2026-05-18 (-53d) |  |  | Complete Android and iOS device testing → 167 |  |
| 178 | **Phase 13: Private pilot** | 2026-07-13 → 2026-06-29 (-14d) | 2026-08-21 → 2026-08-07 (-14d) |  |  |  |  |
| 179 | Recruit and onboard private pilot users | 2026-07-13 → 2026-06-29 (-14d) | 2026-07-17 → 2026-07-03 (-14d) |  |  |  |  |
| 180 | Run support and feedback capture process | 2026-07-20 → 2026-07-06 (-14d) | 2026-07-24 → 2026-07-10 (-14d) |  |  |  |  |
| 181 | Test veteran claim-preparation workflow | 2026-07-27 → 2026-07-13 (-14d) | 2026-07-31 → 2026-07-17 (-14d) |  |  |  |  |
| 182 | Review doctor and advocate pack usefulness | 2026-08-03 → 2026-07-20 (-14d) | 2026-08-07 → 2026-07-24 (-14d) |  |  |  |  |
| 183 | Fix priority issues from pilot | 2026-08-10 → 2026-07-27 (-14d) | 2026-08-17 → 2026-08-03 (-14d) |  |  |  |  |
| 184 | Prepare pilot outcome report and go/no-go decision | 2026-08-18 → 2026-08-04 (-14d) | 2026-08-21 → 2026-08-07 (-14d) |  |  |  |  |
| 185 | Milestone: Phase 13 complete | 2026-08-21 → 2026-08-07 (-14d) | 2026-08-21 → 2026-08-07 (-14d) |  |  |  |  |
| 186 | **Phase 14: Commercial launch preparation** | 2026-08-24 → 2026-08-10 (-14d) | 2026-10-02 → 2026-09-18 (-14d) |  |  |  |  |
| 187 | Decide and implement billing/subscription model | 2026-08-24 → 2026-08-10 (-14d) | 2026-08-28 → 2026-08-14 (-14d) |  |  |  |  |
| 188 | Build organisation account model | 2026-08-31 → 2026-08-17 (-14d) | 2026-09-04 → 2026-08-21 (-14d) |  |  |  |  |
| 189 | Set up support inbox and help centre | 2026-09-07 → 2026-08-24 (-14d) | 2026-09-11 → 2026-08-28 (-14d) |  |  |  |  |
| 190 | Create marketing site and onboarding content | 2026-09-14 → 2026-08-31 (-14d) | 2026-09-18 → 2026-09-04 (-14d) |  |  |  |  |
| 191 | Prepare App Store and Play Store materials | 2026-09-21 → 2026-09-07 (-14d) | 2026-09-25 → 2026-09-11 (-14d) |  |  |  |  |
| 192 | Complete launch readiness and production operations | 2026-09-28 → 2026-09-14 (-14d) | 2026-10-02 → 2026-09-18 (-14d) |  |  |  |  |
| 193 | Milestone: Phase 14 complete | 2026-10-02 → 2026-09-18 (-14d) | 2026-10-02 → 2026-09-18 (-14d) |  |  |  |  |

## Version 9 (saved 2026-07-26)

Note of the change: Track mobile solution file and updated ProjectLibre plan

Last finish 2026-09-18 → 2026-06-10 (-100d). Complete tasks 144 → 145.

Added:

| ID | Task | Duration | Start | Finish | Predecessors | Resources |
| --- | --- | --- | --- | --- | --- | --- |
| 170 | Register uploaded functional/load evidence templates | 0d | 2026-05-18 | 2026-05-18 |  |  |
| 171 | Create functional impact question bank | 0d | 2026-05-18 | 2026-05-18 |  |  |
| 172 | Create Good Day / Bad Day builder | 0d | 2026-05-18 | 2026-05-18 |  |  |
| 173 | Create load bearing and load factor data model | 0d | 2026-05-18 | 2026-05-18 |  |  |
| 174 | Create lifting and carrying exposure builder | 0d | 2026-05-18 | 2026-05-18 |  |  |
| 175 | Create stairs, ladders and rungs exposure builder | 0d | 2026-05-18 | 2026-05-18 |  |  |
| 176 | Create kneeling and squatting exposure builder | 0d | 2026-05-18 | 2026-05-18 |  |  |
| 177 | Create neck and shoulder load carriage builder | 0d | 2026-05-18 | 2026-05-18 |  |  |
| 179 | Create RAN/equipment weight reference library | 0d | 2026-05-18 | 2026-05-18 |  |  |
| 180 | Create hazard exposure table builder | 0d | 2026-05-18 | 2026-05-18 |  |  |
| 181 | Add admin templates for functional/load evidence tools | 0d | 2026-05-18 | 2026-05-18 |  |  |
| 182 | Add prompt and disclaimer versions for functional/load evidence tools | 0d | 2026-05-18 | 2026-05-18 |  |  |
| 183 | Add Claim Starter Pack DOCX sections | 0d | 2026-05-18 | 2026-05-18 |  |  |
| 184 | Add Doctor Guidance Pack DOCX sections | 0d | 2026-05-18 | 2026-05-18 |  |  |
| 185 | Add PDF export support for evidence annexes | 0d | 2026-05-18 | 2026-05-18 |  |  |
| 188 | **Phase 13: GARP M 2026 change integration** | 0d | 2026-05-11 | 2026-05-11 |  |  |
| 189 | Import and register GARP M 2026 source documents | 0d | 2026-05-11 | 2026-05-11 |  |  |
| 190 | Complete current-versus-July-2026 GARP M comparison note | 0d | 2026-05-11 | 2026-05-11 |  |  |
| 191 | Add GARP M version metadata to source registry | 0d | 2026-05-11 | 2026-05-11 |  |  |
| 192 | Add GARP M version metadata to question templates | 0d | 2026-05-11 | 2026-05-11 |  |  |
| 193 | Add GARP M version metadata to document templates | 0d | 2026-05-11 | 2026-05-11 |  |  |
| 194 | Update GARP M question engine content | 0d | 2026-05-11 | 2026-05-11 |  |  |
| 195 | Update GARP M summary content | 0d | 2026-05-11 | 2026-05-11 |  |  |
| 196 | Update evidence checklist mappings | 0d | 2026-05-11 | 2026-05-11 |  |  |
| 197 | Update Claim Starter Pack template wording | 0d | 2026-05-11 | 2026-05-11 |  |  |
| 198 | Update Doctor Guidance Pack template wording | 0d | 2026-05-11 | 2026-05-11 |  |  |
| 199 | Add GARP M 2026 prompt versions | 0d | 2026-05-11 | 2026-05-11 |  |  |
| 200 | Add GARP M 2026 disclaimer versions | 0d | 2026-05-11 | 2026-05-11 |  |  |
| 201 | Add admin audit filters for GARP M 2026 events | 0d | 2026-05-11 | 2026-05-11 |  |  |
| 202 | Add GARP M 2026 smoke test checklist | 0d | 2026-05-11 | 2026-05-11 |  |  |
| 204 | **Phase 14: Security, privacy and production hardening** | 0d | 2026-05-18 | 2026-05-18 |  |  |
| 212 | Milestone: Phase 12 complete | 0d | 2026-05-18 | 2026-05-18 | 211 | Security / QA |
| 213 | **Phase 15: Private pilot** | 0d | 2026-06-10 | 2026-06-10 |  |  |
| 220 | Milestone: Phase 13 complete | 0d | 2026-06-10 | 2026-06-10 | 219 | Pilot / Operations |
| 221 | **Phase 16: Commercial launch preparation** | 22d | 2026-05-11 | 2026-06-10 |  |  |

Changed:

| ID | Task | Start | Finish | Duration | Complete | Predecessors | Other |
| --- | --- | --- | --- | --- | --- | --- | --- |
| 153 | **Phase 11: Android and iOS app MVP** |  | 2026-05-18 → 2026-06-10 (+23d) | 0d? → 17d? |  |  |  |
| 157 | Build authenticated API client and token flow |  |  |  | 0% → 100% |  |  |
| 158 | Build dashboard and claim workspace screens | 2026-05-18 → 2026-06-10 (+23d) | 2026-05-18 → 2026-06-10 (+23d) |  | 0% → 25% |  |  |
| 159 | Build condition intake and question engine screens | 2026-05-18 → 2026-06-10 (+23d) | 2026-05-18 → 2026-06-10 (+23d) |  |  |  |  |
| 160 | Build evidence checklist and upload flow | 2026-05-18 → 2026-06-10 (+23d) | 2026-05-18 → 2026-06-10 (+23d) |  |  |  |  |
| 161 | Build AI draft review and document download screens | 2026-05-18 → 2026-06-10 (+23d) | 2026-05-18 → 2026-06-10 (+23d) |  |  |  |  |
| 162 | Add mobile loading, error and empty states | 2026-05-18 → 2026-06-10 (+23d) | 2026-05-18 → 2026-06-10 (+23d) |  |  |  |  |
| 163 | Add Android app icon, name and basic release config | 2026-05-18 → 2026-06-10 (+23d) | 2026-05-18 → 2026-06-10 (+23d) |  |  |  |  |
| 164 | Add iOS app icon, name and basic release config | 2026-05-18 → 2026-06-10 (+23d) | 2026-05-18 → 2026-06-10 (+23d) |  |  |  |  |
| 165 | Complete Android device testing | 2026-05-18 → 2026-06-10 (+23d) | 2026-05-18 → 2026-06-10 (+23d) |  |  |  |  |
| 166 | Complete iOS device testing | 2026-05-18 → 2026-06-10 (+23d) | 2026-05-18 → 2026-06-10 (+23d) |  |  |  |  |
| 167 | Add Phase 11 mobile smoke test checklist | 2026-05-18 → 2026-06-10 (+23d) | 2026-05-18 → 2026-06-10 (+23d) |  |  |  |  |
| 168 | Milestone: Phase 11 complete | 2026-05-18 → 2026-06-10 (+23d) | 2026-05-18 → 2026-06-10 (+23d) |  |  |  |  |
| 169 | **Phase 12: Security, privacy and production hardening** |  | 2026-06-26 → 2026-05-18 (-39d) | 30d? → 0d |  |  | baseline start 2026-10-29 → none; baseline finish 2026-12-09 → none |
| 178 | Create heavy load carrying builder | 2026-06-29 → 2026-05-18 (-42d) | 2026-08-07 → 2026-05-18 (-81d) | 30d? → 0d |  |  | was named Phase 13: Private pilot; baseline start 2026-12-24 → none; baseline finish 2027-02-03 → none |
| 186 | Add Functional and Load Evidence smoke test checklist | 2026-08-10 → 2026-05-18 (-84d) | 2026-09-18 → 2026-05-18 (-123d) | 30d? → 0d |  |  | was named Phase 14: Commercial launch preparation; baseline start 2027-02-04 → none; baseline finish 2027-03-17 → none |
| 187 | Milestone: Phase 12 complete | 2026-06-26 → 2026-05-18 (-39d) | 2026-06-26 → 2026-05-18 (-39d) | 0d? → 0d |  | 211 → none | resources Security / QA → none; baseline start 2026-12-09 → none; baseline finish 2026-12-09 → none |
| 203 | Milestone: Phase 13 complete | 2026-08-07 → 2026-05-11 (-88d) | 2026-08-07 → 2026-05-11 (-88d) | 0d? → 0d |  | 219 → none | resources Pilot / Operations → none; baseline start 2027-02-03 → none; baseline finish 2027-02-03 → none |
| 205 | Review RBAC enforcement and audit logging |  | 2026-05-22 → 2026-05-18 (-4d) | 5d? → 0d |  |  |  |
| 206 | Build data export and deletion workflows | 2026-05-25 → 2026-05-18 (-7d) | 2026-05-29 → 2026-05-18 (-11d) | 5d? → 0d |  |  |  |
| 207 | Create backup and disaster recovery process | 2026-06-01 → 2026-05-18 (-14d) | 2026-06-04 → 2026-05-18 (-17d) | 4d? → 0d |  |  |  |
| 208 | Add rate limiting, monitoring and error alerts | 2026-06-05 → 2026-05-18 (-18d) | 2026-06-10 → 2026-05-18 (-23d) | 4d? → 0d |  |  |  |
| 209 | Add consent tracking and AI disclosure tracking | 2026-06-11 → 2026-05-18 (-24d) | 2026-06-16 → 2026-05-18 (-29d) | 4d? → 0d |  |  |  |
| 210 | Draft privacy policy, terms and support process | 2026-06-17 → 2026-05-18 (-30d) | 2026-06-22 → 2026-05-18 (-35d) | 4d? → 0d |  |  |  |
| 211 | Prepare penetration test and remediation buffer | 2026-06-23 → 2026-05-18 (-36d) | 2026-06-26 → 2026-05-18 (-39d) | 4d? → 0d |  |  |  |
| 214 | Recruit and onboard private pilot users | 2026-06-29 → 2026-06-10 (-19d) | 2026-07-03 → 2026-06-10 (-23d) | 5d? → 0d |  | 152, 168, 187 → 152, 168, 212 |  |
| 215 | Run support and feedback capture process | 2026-07-06 → 2026-06-10 (-26d) | 2026-07-10 → 2026-06-10 (-30d) | 5d? → 0d |  |  |  |
| 216 | Test veteran claim-preparation workflow | 2026-07-13 → 2026-06-10 (-33d) | 2026-07-17 → 2026-06-10 (-37d) | 5d? → 0d |  |  |  |
| 217 | Review doctor and advocate pack usefulness | 2026-07-20 → 2026-06-10 (-40d) | 2026-07-24 → 2026-06-10 (-44d) | 5d? → 0d |  |  |  |
| 218 | Fix priority issues from pilot | 2026-07-27 → 2026-06-10 (-47d) | 2026-08-03 → 2026-06-10 (-54d) | 6d? → 0d |  |  |  |
| 219 | Prepare pilot outcome report and go/no-go decision | 2026-08-04 → 2026-06-10 (-55d) | 2026-08-07 → 2026-06-10 (-58d) | 4d? → 0d |  |  |  |
| 222 | Decide and implement billing/subscription model | 2026-08-10 → 2026-06-10 (-61d) | 2026-08-14 → 2026-06-10 (-65d) | 5d? → 0d |  | 203 → 220 |  |
| 223 | Build organisation account model | 2026-08-17 → 2026-06-10 (-68d) | 2026-08-21 → 2026-06-10 (-72d) | 5d? → 0d |  |  |  |
| 224 | Set up support inbox and help centre | 2026-08-24 → 2026-06-10 (-75d) | 2026-08-28 → 2026-06-10 (-79d) | 5d? → 0d |  |  |  |
| 225 | Create marketing site and onboarding content | 2026-08-31 → 2026-06-10 (-82d) | 2026-09-04 → 2026-06-10 (-86d) | 5d? → 0d |  |  |  |
| 226 | Prepare App Store and Play Store materials | 2026-09-07 → 2026-06-10 (-89d) | 2026-09-11 → 2026-06-10 (-93d) | 5d? → 0d |  |  |  |
| 227 | Complete launch readiness and production operations | 2026-09-14 → 2026-06-10 (-96d) | 2026-09-18 → 2026-06-10 (-100d) | 5d? → 0d |  |  |  |
| 228 | Milestone: Phase 14 complete | 2026-09-18 → 2026-06-10 (-100d) | 2026-09-18 → 2026-06-10 (-100d) | 0d? → 0d |  |  |  |

## Version 10 (saved 2026-09-23)

Note of the change: Merge 8e7488cc810ae3c29d851e387f9d47ed23392c97 into 4fea0695f6d06c0afd9d3a3370d1179e5e90c815

Last finish 2026-06-10 → 2026-09-10 (+92d). Complete tasks 145 → 153.

Added:

| ID | Task | Duration | Start | Finish | Predecessors | Resources |
| --- | --- | --- | --- | --- | --- | --- |
| 228 | Milestone: Phase 16 complete | 0d | 2026-09-10 | 2026-09-10 | 227 | Pilot / Operations |

Removed: 212 Milestone: Phase 12 complete

Changed:

| ID | Task | Start | Finish | Duration | Complete | Predecessors | Other |
| --- | --- | --- | --- | --- | --- | --- | --- |
| 153 | **Phase 11: Android and iOS app MVP** |  | 2026-06-10 → 2026-09-10 (+92d) | 17d? → 83d? |  |  |  |
| 157 | Build authenticated API client and token flow | 2026-05-18 → 2026-05-22 (+4d) | 2026-05-18 → 2026-05-22 (+4d) |  |  |  |  |
| 158 | Build dashboard and claim workspace screens | 2026-06-10 → 2026-07-28 (+48d) | 2026-06-10 → 2026-07-28 (+48d) |  | 25% → 100% |  |  |
| 159 | Build condition intake and question engine screens | 2026-06-10 → 2026-07-31 (+51d) | 2026-06-10 → 2026-07-31 (+51d) |  | 0% → 100% |  |  |
| 160 | Build evidence checklist and upload flow | 2026-06-10 → 2026-09-10 (+92d) | 2026-06-10 → 2026-09-10 (+92d) |  | 0% → 100% |  |  |
| 161 | Build AI draft review and document download screens | 2026-06-10 → 2026-09-10 (+92d) | 2026-06-10 → 2026-09-10 (+92d) |  | 0% → 100% |  |  |
| 162 | Add mobile loading, error and empty states | 2026-06-10 → 2026-09-10 (+92d) | 2026-06-10 → 2026-09-10 (+92d) |  | 0% → 100% |  |  |
| 163 | Add Android app icon, name and basic release config | 2026-06-10 → 2026-09-10 (+92d) | 2026-06-10 → 2026-09-10 (+92d) |  | 0% → 100% |  |  |
| 164 | Add iOS app icon, name and basic release config | 2026-06-10 → 2026-09-10 (+92d) | 2026-06-10 → 2026-09-10 (+92d) |  | 0% → 100% |  |  |
| 165 | Complete Android device testing | 2026-06-10 → 2026-09-10 (+92d) | 2026-06-10 → 2026-09-10 (+92d) |  |  |  |  |
| 166 | Complete iOS device testing | 2026-06-10 → 2026-09-10 (+92d) | 2026-06-10 → 2026-09-10 (+92d) |  |  |  |  |
| 167 | Add Phase 11 mobile smoke test checklist | 2026-06-10 → 2026-09-10 (+92d) | 2026-06-10 → 2026-09-10 (+92d) |  | 0% → 100% |  |  |
| 168 | Milestone: Phase 11 complete | 2026-06-10 → 2026-09-10 (+92d) | 2026-06-10 → 2026-09-10 (+92d) |  |  |  |  |
| 169 | **Phase 12: Functional and Load Evidence tools** | 2026-05-18 → 2026-05-11 (-7d) | 2026-05-18 → 2026-05-11 (-7d) |  |  |  | was named Phase 12: Security, privacy and production hardening |
| 170 | Register uploaded functional/load evidence templates | 2026-05-18 → 2026-05-11 (-7d) | 2026-05-18 → 2026-05-11 (-7d) |  |  |  |  |
| 171 | Create functional impact question bank | 2026-05-18 → 2026-05-11 (-7d) | 2026-05-18 → 2026-05-11 (-7d) |  |  |  |  |
| 172 | Create Good Day / Bad Day builder | 2026-05-18 → 2026-05-11 (-7d) | 2026-05-18 → 2026-05-11 (-7d) |  |  |  |  |
| 173 | Create load bearing and load factor data model | 2026-05-18 → 2026-05-11 (-7d) | 2026-05-18 → 2026-05-11 (-7d) |  |  |  |  |
| 174 | Create lifting and carrying exposure builder | 2026-05-18 → 2026-05-11 (-7d) | 2026-05-18 → 2026-05-11 (-7d) |  |  |  |  |
| 175 | Create stairs, ladders and rungs exposure builder | 2026-05-18 → 2026-05-11 (-7d) | 2026-05-18 → 2026-05-11 (-7d) |  |  |  |  |
| 176 | Create kneeling and squatting exposure builder | 2026-05-18 → 2026-05-11 (-7d) | 2026-05-18 → 2026-05-11 (-7d) |  |  |  |  |
| 177 | Create neck and shoulder load carriage builder | 2026-05-18 → 2026-05-11 (-7d) | 2026-05-18 → 2026-05-11 (-7d) |  |  |  |  |
| 178 | Create heavy load carrying builder | 2026-05-18 → 2026-05-11 (-7d) | 2026-05-18 → 2026-05-11 (-7d) |  |  |  |  |
| 179 | Create RAN/equipment weight reference library | 2026-05-18 → 2026-05-11 (-7d) | 2026-05-18 → 2026-05-11 (-7d) |  |  |  |  |
| 180 | Create hazard exposure table builder | 2026-05-18 → 2026-05-11 (-7d) | 2026-05-18 → 2026-05-11 (-7d) |  |  |  |  |
| 181 | Add admin templates for functional/load evidence tools | 2026-05-18 → 2026-05-11 (-7d) | 2026-05-18 → 2026-05-11 (-7d) |  |  |  |  |
| 182 | Add prompt and disclaimer versions for functional/load evidence tools | 2026-05-18 → 2026-05-11 (-7d) | 2026-05-18 → 2026-05-11 (-7d) |  |  |  |  |
| 183 | Add Claim Starter Pack DOCX sections | 2026-05-18 → 2026-05-11 (-7d) | 2026-05-18 → 2026-05-11 (-7d) |  |  |  |  |
| 184 | Add Doctor Guidance Pack DOCX sections | 2026-05-18 → 2026-05-11 (-7d) | 2026-05-18 → 2026-05-11 (-7d) |  |  |  |  |
| 185 | Add PDF export support for evidence annexes | 2026-05-18 → 2026-05-11 (-7d) | 2026-05-18 → 2026-05-11 (-7d) |  |  |  |  |
| 186 | Add Functional and Load Evidence smoke test checklist | 2026-05-18 → 2026-05-11 (-7d) | 2026-05-18 → 2026-05-11 (-7d) |  |  |  |  |
| 187 | Milestone: Phase 12 complete | 2026-05-18 → 2026-05-11 (-7d) | 2026-05-18 → 2026-05-11 (-7d) |  |  |  |  |
| 204 | **Phase 14: Security, privacy and production hardening** | 2026-05-18 → 2026-05-15 (-3d) | 2026-05-18 → 2026-05-15 (-3d) |  |  |  |  |
| 205 | Review RBAC enforcement and audit logging | 2026-05-18 → 2026-05-15 (-3d) | 2026-05-18 → 2026-05-15 (-3d) |  |  |  |  |
| 206 | Build data export and deletion workflows | 2026-05-18 → 2026-05-15 (-3d) | 2026-05-18 → 2026-05-15 (-3d) |  |  |  |  |
| 207 | Create backup and disaster recovery process | 2026-05-18 → 2026-05-15 (-3d) | 2026-05-18 → 2026-05-15 (-3d) |  |  |  |  |
| 208 | Add rate limiting, monitoring and error alerts | 2026-05-18 → 2026-05-15 (-3d) | 2026-05-18 → 2026-05-15 (-3d) |  |  |  |  |
| 209 | Add consent tracking and AI disclosure tracking | 2026-05-18 → 2026-05-15 (-3d) | 2026-05-18 → 2026-05-15 (-3d) |  |  |  |  |
| 210 | Draft privacy policy, terms and support process | 2026-05-18 → 2026-05-15 (-3d) | 2026-05-18 → 2026-05-15 (-3d) |  |  |  |  |
| 211 | Prepare penetration test and remediation buffer | 2026-05-18 → 2026-05-15 (-3d) | 2026-05-18 → 2026-05-15 (-3d) |  |  |  |  |
| 212 | Milestone: Phase 14 complete | 2026-06-10 → 2026-05-15 (-26d) | 2026-06-10 → 2026-05-15 (-26d) |  |  | 227 → 211 | resources Pilot / Operations → Security / QA; baseline start 2027-03-17 → 2026-12-09; baseline finish 2027-03-17 → 2026-12-09 |
| 213 | **Phase 15: Private pilot** | 2026-06-10 → 2026-09-10 (+92d) | 2026-06-10 → 2026-09-10 (+92d) |  |  |  |  |
| 214 | Recruit and onboard private pilot users | 2026-06-10 → 2026-09-10 (+92d) | 2026-06-10 → 2026-09-10 (+92d) |  |  | 152, 168, Milestone: Phase 12 complete → 152, 168, 212 |  |
| 215 | Run support and feedback capture process | 2026-06-10 → 2026-09-10 (+92d) | 2026-06-10 → 2026-09-10 (+92d) |  |  |  |  |
| 216 | Test veteran claim-preparation workflow | 2026-06-10 → 2026-09-10 (+92d) | 2026-06-10 → 2026-09-10 (+92d) |  |  |  |  |
| 217 | Review doctor and advocate pack usefulness | 2026-06-10 → 2026-09-10 (+92d) | 2026-06-10 → 2026-09-10 (+92d) |  |  |  |  |
| 218 | Fix priority issues from pilot | 2026-06-10 → 2026-09-10 (+92d) | 2026-06-10 → 2026-09-10 (+92d) |  |  |  |  |
| 219 | Prepare pilot outcome report and go/no-go decision | 2026-06-10 → 2026-09-10 (+92d) | 2026-06-10 → 2026-09-10 (+92d) |  |  |  |  |
| 220 | Milestone: Phase 15 complete | 2026-06-10 → 2026-09-10 (+92d) | 2026-06-10 → 2026-09-10 (+92d) |  |  |  | was named Milestone: Phase 13 complete |
| 221 | **Phase 16: Commercial launch preparation** |  | 2026-06-10 → 2026-09-10 (+92d) | 22d → 88d |  |  |  |
| 222 | Decide and implement billing/subscription model | 2026-06-10 → 2026-09-10 (+92d) | 2026-06-10 → 2026-09-10 (+92d) |  |  |  |  |
| 223 | Build organisation account model | 2026-06-10 → 2026-09-10 (+92d) | 2026-06-10 → 2026-09-10 (+92d) |  |  |  |  |
| 224 | Set up support inbox and help centre | 2026-06-10 → 2026-09-10 (+92d) | 2026-06-10 → 2026-09-10 (+92d) |  |  |  |  |
| 225 | Create marketing site and onboarding content | 2026-06-10 → 2026-09-10 (+92d) | 2026-06-10 → 2026-09-10 (+92d) |  |  |  |  |
| 226 | Prepare App Store and Play Store materials | 2026-06-10 → 2026-09-10 (+92d) | 2026-06-10 → 2026-09-10 (+92d) |  |  |  |  |
| 227 | Complete launch readiness and production operations | 2026-06-10 → 2026-09-10 (+92d) | 2026-06-10 → 2026-09-10 (+92d) |  |  |  |  |
